# Plantilla Project Planning PASCO - CMMI Desarrollos a Medida RUP

Schedule from MS Project, 2005-09-15 to 2005-12-28.
GMD S.A.

## Calendars

- Estándar: Mon-Fri 08:00-14:00, 15:00-17:00; Sat-Sun off.

## Resources

| Resource |
| --- |
| AS |
| AP |
| JS |
| Cliente |
| AC |
| GP |
| GC |
| LERP |
| DBA |
| RP |

## Schedule

| ID | WBS | Task | Type | Duration | Start | Finish | Predecessors | Total slack | Free slack | Resources | Work | Text2 |
| --- | --- | --- | --- | --- | --- | --- | --- | --- | --- | --- | --- | --- |
| 1 | 1 | **{SE} - {S} - Cronograma de Proyecto v0.3** |  | 74.84d? | 2005-09-15 | 2005-12-28 |  | 0d |  |  | 2135.1h | No inicia |
| 2 | 1.1 | **Procesos de Gestión** |  | 74.84d? | 2005-09-15 | 2005-12-28 |  | 0d |  |  | 257h | No inicia |
| 3 | 1.1.1 | **Inicio** |  | 25.01d? | 2005-09-15 | 2005-10-20 |  | 0d |  |  | 196.3h | No inicia |
| 4 | 1.1.1.1 | Revisión de metodologia de trabajo | milestone | 0h | 2005-09-15 | 2005-09-15 |  | 0d |  | AS; AP |  | No inicia |
| 5 | 1.1.1.2 | **Plan de Proyecto** |  | 23.01d? | 2005-09-15 | 2005-10-18 | 4 | 0d |  |  | 156.3h | No inicia |
| 6 | 1.1.1.2.1 | **Elaboración de Plan de Proyecto** |  | 8.01d? | 2005-09-15 | 2005-09-27 |  | 0d |  |  | 8h | No inicia |
| 7 | 1.1.1.2.1.1 | Etiquetado de Plan de proyecto |  | 0.1h | 2005-09-15 | 2005-09-15 |  | 8d |  |  |  | No inicia |
| 8 | 1.1.1.2.1.2 | Elaboración WBS, ajuste LMR, definición de entregables | milestone | 0d | 2005-09-15 | 2005-09-15 |  | 0d |  | AS |  | No inicia |
| 9 | 1.1.1.2.1.3 | Estimación de esfuerzo | milestone | 0d | 2005-09-26 | 2005-09-26 | 104 | 0d |  | AS |  | No inicia |
| 10 | 1.1.1.2.1.4 | **Elaboración de cronogama detallado** |  | 1d? | 2005-09-26 | 2005-09-27 | 9 | 0d |  | AS | 8h | No inicia |
| 11 | 1.1.1.2.1.4.1 | Etiquetado de item: cronograma |  | 0.1h | 2005-09-26 | 2005-09-26 |  | 0.99d | 0d |  |  | No inicia |
| 12 | 1.1.1.2.1.4.2 | Elaboración de cronogama detallado |  | 1d? | 2005-09-26 | 2005-09-27 |  | 0d |  |  |  | No inicia |
| 13 | 1.1.1.2.1.5 | Necesidades del proyecto | milestone | 0d | 2005-09-26 | 2005-09-26 | 11 | 0.99d | 0d | AS |  | No inicia |
| 14 | 1.1.1.2.1.6 | Elaboración de Plan de Proyecto: Generalidades | milestone | 0d | 2005-09-26 | 2005-09-26 | 13 | 0.99d | 0d | AS |  | No inicia |
| 15 | 1.1.1.2.1.7 | Definición de organización del proyecto | milestone | 0d | 2005-09-26 | 2005-09-26 | 14 | 0.99d | 0d | AS |  | No inicia |
| 16 | 1.1.1.2.1.8 | Identificación de riesgos del proyecto | milestone | 0d | 2005-09-26 | 2005-09-26 | 15 | 0.99d |  | AS |  | No inicia |
| 17 | 1.1.1.2.2 | **Elaboración de planes de soporte** |  | 1d? | 2005-09-15 | 2005-09-15 |  | 5.01d |  |  | 8h | No inicia |
| 18 | 1.1.1.2.2.1 | Plan de riesgos | milestone | 0d | 2005-09-15 | 2005-09-15 |  | 8.01d |  | AS |  | No inicia |
| 19 | 1.1.1.2.2.2 | Plan de comunicaciones | milestone | 0d | 2005-09-15 | 2005-09-15 |  | 8.01d |  | AS |  | No inicia |
| 20 | 1.1.1.2.2.3 | Plan de gestion de requerimientos | milestone | 0d | 2005-09-15 | 2005-09-15 |  | 8.01d |  | AS |  | No inicia |
| 21 | 1.1.1.2.2.4 | Plan de dependencias del proyecto | milestone | 0d | 2005-09-15 | 2005-09-15 |  | 8.01d |  | AS |  | No inicia |
| 22 | 1.1.1.2.2.5 | Plan de estimacion | milestone | 0d | 2005-09-15 | 2005-09-15 |  | 8.01d |  | AS |  | No inicia |
| 23 | 1.1.1.2.2.6 | Plan de verificacion | milestone | 0d | 2005-09-15 | 2005-09-15 |  | 8.01d |  | AC |  | No inicia |
| 24 | 1.1.1.2.2.7 | Plan de toma de decisiones estructuradas | milestone | 0d | 2005-09-15 | 2005-09-15 |  | 5.01d | 2d | JS |  | No inicia |
| 25 | 1.1.1.2.2.8 | Plan de gestion interna |  | 1d? | 2005-09-15 | 2005-09-15 |  | 7.01d |  | AS | 8h | No inicia |

Notes:
- 3: PASCO
- 8: La actividad que continua es la fase de INCEPCION de Ingeniería / Incluye la seccion 13 del PLan de Proyecto / 13.ENTREGABLES DEL PROYECTO
- 9: La actividad precedente es la fase de INCEPCION de Ingeniería
- 13: Incluye los siguientes secciones del Plan del Proyecto: / REQUERIMIENTOS DEL PROYECTO/ REQUERIMIENTOS DE PERSONAL/ REQUERIMIENTOS DE SERVICIOS/ ESTACIONES DE TRABAJO/ SERVIDORES/ REDES Y COMUNICACIONES/ SOFTWARE/ INFRAESTRUCTURA Y MOBILIARIO/ OTROS
- 14: Incluye los siguientes secciones del Plan del Proyecto: / 1.INTRODUCCIÓN/ 2.OBJETIVO DEL PLAN DE PROYECTO/ 3.ANTECEDENTES/ 4.RESPONSABLES DE LA PLANIFICACIÓN/ 5.OBJETIVO DEL PROYECTO
- 15: Incluye los siguientes secciones del Plan del Proyecto: / 14. ORGANIZACIÓN DEL PROYECTO/ ASIGNACION DE PERSONAL/ PLAN DE CAPACITACION DEL PERSONAL DEL PROYECTO
- 23: Revision de Pares

| ID | WBS | Task | Type | Duration | Start | Finish | Predecessors | Total slack | Resources | Work | Text2 |
| --- | --- | --- | --- | --- | --- | --- | --- | --- | --- | --- | --- |
| 26 | 1.1.1.2.3 | **Actualización de project Charter** |  | 1d? | 2005-09-15 | 2005-09-15 |  | 8d | AS | 8h | No inicia |
| 27 | 1.1.1.2.3.1 | Etiquetado de item :proyect Charter |  | 0.1h | 2005-09-15 | 2005-09-15 |  | 8d |  |  | No inicia |
| 28 | 1.1.1.2.3.2 | Actualización de project Charter |  | 1d? | 2005-09-15 | 2005-09-15 |  | 22.01d |  |  | No inicia |
| 29 | 1.1.1.2.4 | **Revisión interna** |  | 0d | 2005-09-27 | 2005-09-27 | 6, 17, 27 | 0d |  |  | No inicia |
| 30 | 1.1.1.2.4.1 | Revisión por el equipo | milestone | 0h | 2005-09-27 | 2005-09-27 |  | 0d | JS |  | No inicia |
| 31 | 1.1.1.2.4.2 | Ajustes al Plan de Proyecto | milestone | 0h | 2005-09-27 | 2005-09-27 | 30 | 0d | AS |  | No inicia |
| 32 | 1.1.1.2.5 | **Revisión de Pares** |  | 3d? | 2005-09-27 | 2005-09-30 | 29 | 0d |  | 32h | No inicia |
| 33 | 1.1.1.2.5.1 | Preparación de Revisión de Pares |  | 1d? | 2005-09-27 | 2005-09-28 |  | 0d | LERP | 8h | No inicia |
| 34 | 1.1.1.2.5.2 | Ejecución de la Revisión de Pares |  | 1d? | 2005-09-28 | 2005-09-29 | 33 | 0d | RP; AS | 16h | No inicia |
| 35 | 1.1.1.2.5.3 | Cierre de la revisión de pares |  | 1d? | 2005-09-29 | 2005-09-30 | 34 | 0d | LERP | 8h | No inicia |
| 36 | 1.1.1.2.6 | **Gestion de Configuracion** |  | 0.03d | 2005-09-15 | 2005-09-15 |  | 22.99d |  | 0.3h | No inicia |
| 37 | 1.1.1.2.6.1 | Solicitar auditoria de GC |  | 0.1h | 2005-09-15 | 2005-09-15 |  | 23d | AS | 0.1h | No inicia |
| 38 | 1.1.1.2.6.2 | Auditoria de GC de Proyecto Especial |  | 0.2h | 2005-09-15 | 2005-09-15 |  | 22.99d | GC | 0.2h | No inicia |
| 39 | 1.1.1.2.7 | **Aseguramiento de calidad** |  | 5d? | 2005-09-30 | 2005-10-07 | 32 | 0d |  | 44h | No inicia |
| 40 | 1.1.1.2.7.1 | Preparar las actividades de QA. |  | 1d? | 2005-09-30 | 2005-10-03 |  | 0d | AC | 8h | No inicia |
| 41 | 1.1.1.2.7.2 | Ejecutar la Revisión de QA - Producto |  | 1d? | 2005-10-03 | 2005-10-04 | 40 | 0d | AC | 8h | No inicia |
| 42 | 1.1.1.2.7.3 | Ejecutar la Revisión de QA - Procesos |  | 0.5d | 2005-10-04 | 2005-10-04 | 41 | 2.5d | AC | 4h | No inicia |
| 43 | 1.1.1.2.7.4 | Levantar la No Conformidad |  | 1d? | 2005-10-04 | 2005-10-05 | 41 | 0d | AS | 8h | No inicia |
| 44 | 1.1.1.2.7.5 | Realizar el seguimiento |  | 1d? | 2005-10-05 | 2005-10-06 | 43 | 0d | AC | 8h | No inicia |
| 45 | 1.1.1.2.7.6 | Elaborar e Informar las actividades de QA a la Gerencia del Servicio |  | 1d? | 2005-10-06 | 2005-10-07 | 44 | 0d | AC | 8h | No inicia |
| 46 | 1.1.1.2.8 | Aprobación de jefatura del Plan de Proyecto | milestone | 0h | 2005-09-27 | 2005-09-27 | 31 | 15d | JS; GP |  | No inicia |
| 47 | 1.1.1.2.9 | **Revisión por el cliente** |  | 3d | 2005-10-07 | 2005-10-12 | 39 | 0d |  | 24h | No inicia |
| 48 | 1.1.1.2.9.1 | Entrega de Plan de Proyecto | milestone | 0d | 2005-10-07 | 2005-10-07 |  | 0d | JS |  | No inicia |
| 49 | 1.1.1.2.9.2 | Reunión conjunta de revisión del Plan de Proyecto | milestone | 0h | 2005-10-07 | 2005-10-07 | 48 | 0d | AS; JS; Cliente |  | No inicia |
| 50 | 1.1.1.2.9.3 | Revision por parte del cliente |  | 3d | 2005-10-07 | 2005-10-12 | 49 | 0d | Cliente | 24h | No inicia |

Notes:
- 32: Incluye las revisiones de los documentos generados en la fase de incepcion de ingenieria: Modelo de Negocio y Documento de Alcance, plan de iteraciones.
- 34: Inluye levantamiento de disconformidades
- 35: Informe de Revision de pares a gerencia
- 36: Incluye las revisiones de los documentos generados en la fase de incepcion de ingenieria: Modelo de Negocio y Documento de Alcance, plan de iteraciones.
- 39: Incluye las revisiones de los documentos generados en la fase de incepcion de ingenieria: Modelo de Negocio y Documento de Alcance, plan de iteraciones.
- 45: Terminando esta actividad etiquetar directorio

| ID | WBS | Task | Type | Duration | Start | Finish | Predecessors | Total slack | Free slack | Resources | Work | Text2 |
| --- | --- | --- | --- | --- | --- | --- | --- | --- | --- | --- | --- | --- |
| 51 | 1.1.1.2.10 | **Ajustes al Plan de Proyecto** |  | 4d? | 2005-10-12 | 2005-10-18 | 50 | 0d |  |  | 32h | No inicia |
| 52 | 1.1.1.2.10.1 | **Levantar observaciones de plan** |  | 2d? | 2005-10-12 | 2005-10-14 |  | 0d |  | AS | 16h | No inicia |
| 53 | 1.1.1.2.10.1.1 | Etiquetado de plan de proyecto |  | 1d? | 2005-10-12 | 2005-10-13 |  | 0d |  |  |  | No inicia |
| 54 | 1.1.1.2.10.1.2 | Levantar observaciones |  | 1d? | 2005-10-13 | 2005-10-14 | 53 | 0d |  |  |  | No inicia |
| 55 | 1.1.1.2.10.2 | Revision de Calidad de las observaciones levantadas |  | 1d? | 2005-10-14 | 2005-10-17 | 54 | 0d |  | AC | 8h | No inicia |
| 56 | 1.1.1.2.10.3 | Revision y aprobacion del plan de proyecto por parte del cliente |  | 1d? | 2005-10-17 | 2005-10-18 | 55 | 0d |  | Cliente | 8h | No inicia |
| 57 | 1.1.1.2.10.4 | Aprobacion del Plan de Proyecto | milestone | 0h | 2005-10-12 | 2005-10-12 |  | 4d |  | Cliente |  | No inicia |
| 58 | 1.1.1.2.10.5 | Actividad de Gestión de la Configuración: Etiquetar Plan: aprobado ONP y generar Baseline |  | 0.3h | 2005-10-12 | 2005-10-12 |  | 3.96d |  |  |  | No inicia |
| 59 | 1.1.1.3 | **Kick Off Meeting Interno** |  | 1d | 2005-10-18 | 2005-10-19 | 5 | 0d |  |  | 16h | No inicia |
| 60 | 1.1.1.3.1 | Elaboración de presentación | milestone | 0d | 2005-10-18 | 2005-10-18 |  | 0d |  | AS |  | No inicia |
| 61 | 1.1.1.3.2 | Invitación a reunión | milestone | 0d | 2005-10-18 | 2005-10-18 | 60 | 0d |  | JS; AS |  | No inicia |
| 62 | 1.1.1.3.3 | Kick Off Meeting Interno |  | 1d | 2005-10-18 | 2005-10-19 | 61 | 0d |  | JS; AS | 16h | No inicia |
| 63 | 1.1.1.3.4 | Acta de reunión con acuerdos tomados | milestone | 0d | 2005-10-19 | 2005-10-19 | 62 | 0d |  | AS |  | No inicia |
| 64 | 1.1.1.4 | **Kick Off Meeting con Cliente** |  | 1d | 2005-10-19 | 2005-10-20 | 59 | 0d |  |  | 24h | No inicia |
| 65 | 1.1.1.4.1 | Elaboración de presentación | milestone | 0d | 2005-10-19 | 2005-10-19 |  | 0d |  | AS |  | No inicia |
| 66 | 1.1.1.4.2 | Aprobación de presentación por Gerente de Proyecto | milestone | 0d | 2005-10-19 | 2005-10-19 | 65 | 0d |  | JS; GP |  | No inicia |
| 67 | 1.1.1.4.3 | Aprobación por Cliente de agenda, presentación y modelo de / Acta | milestone | 0d | 2005-10-19 | 2005-10-19 | 66 | 0d |  | JS; Cliente |  | No inicia |
| 68 | 1.1.1.4.4 | Invitación a reunión | milestone | 0d | 2005-10-19 | 2005-10-19 | 67 | 0d |  | JS |  | No inicia |
| 69 | 1.1.1.4.5 | Kick Off Meeting con Cliente |  | 1d | 2005-10-19 | 2005-10-20 | 68 | 0d |  | JS; AS; Cliente | 24h | No inicia |
| 70 | 1.1.1.4.6 | Acta de reunión con acuerdos tomados | milestone | 0d | 2005-10-20 | 2005-10-20 | 69 | 0d |  | JS; AS |  | No inicia |
| 71 | 1.1.2 | **Asignación, Ejecución, Seguimiento y Control** |  | 2d | 2005-10-20 | 2005-10-24 | 3 | 47.83d |  |  | 24.2h | No inicia |
| 72 | 1.1.2.1 | **Traspaso de Información** |  | 0d | 2005-10-20 | 2005-10-20 |  | 47.83d | 0d |  |  | No inicia |
| 73 | 1.1.2.1.1 | Cierre de puntos pendientes del Acta de Traspaso de Información | milestone | 0d | 2005-10-20 | 2005-10-20 |  | 47.83d |  | AS; AP |  | No inicia |
| 74 | 1.1.2.2 | **Planeamiento Asignación y Control Semanal** |  | 1.75d | 2005-10-20 | 2005-10-21 | 72 | 47.83d | 0d |  | 18.2h | No inicia |
| 75 | 1.1.2.2.1 | **Semana yyyy-mm-dd** |  | 1.75d | 2005-10-20 | 2005-10-21 |  | 47.83d |  |  | 18.2h | No inicia |
| 76 | 1.1.2.2.1.1 | Actualizar TSP |  | 2h | 2005-10-20 | 2005-10-20 |  | 47.83d | 0d | AS | 2h | No inicia |
| 77 | 1.1.2.2.1.2 | Preparar comité interno de proyecto especial |  | 2h | 2005-10-20 | 2005-10-20 | 76 | 47.83d | 0d | AS | 2h | No inicia |
| 78 | 1.1.2.2.1.3 | Generar metricas |  | 2h | 2005-10-20 | 2005-10-20 | 77 | 47.83d | 0d | AS | 2h | No inicia |
| 79 | 1.1.2.2.1.4 | Elaborar informe de estado de proyecto |  | 2h | 2005-10-20 | 2005-10-21 | 78 | 47.83d | 0d | AS | 2h | No inicia |
| 80 | 1.1.2.2.1.5 | Comité interno de proyecto especial |  | 2h | 2005-10-21 | 2005-10-21 | 79 | 47.83d | 0d | AS; AP | 4h | No inicia |
| 81 | 1.1.2.2.1.6 | Asignación de trabajo |  | 2h | 2005-10-21 | 2005-10-21 | 80 | 47.83d | 0d | AS | 2h | No inicia |
| 82 | 1.1.2.2.1.7 | Comité de analistas de proyectos especiales |  | 2h | 2005-10-21 | 2005-10-21 | 81 | 47.83d |  | AS | 2h | No inicia |
| 83 | 1.1.2.2.1.8 | Ejecutar la Revisión de procesos |  | 1h | 2005-10-20 | 2005-10-20 |  | 49.45d |  | AC; AS | 2h | No inicia |
| 84 | 1.1.2.2.1.9 | Auditoria semanal de gestion de configuracion |  | 0.2h | 2005-10-20 | 2005-10-20 |  | 49.55d |  | GC | 0.2h | No inicia |

Notes:
- 51: Debe ser ser revisado nuevamente por calidad
- 59: 7.3.07
- 64: 7.3.08
- 71: PASCO
- 72: 7.1.I05
- 73: solo en caso de que el que ejecuta el proyecto no es el que realizo el plan de proyecto
- 74: 7.3.10 / Las siguientes actividades se realizan semanalmente, por la replanificación del trabajo: / - Reprogramación del Plan de Trabajo con horizonte mínimo de 2 sem. / - Reporte de horas semanales en PEIS / - Registro de Control Semanal (ver formato 7.3.10.R10) / La duración depende de cuanto se estime duren las actividades mencionadas.
- 76: revision diaria tabla de seguimiento de pendientes
- 81: registros en plan semanal
- 84: Deberian figurar los documentos: / ·Plan semanal PE / ·Informe de Estado PE / ·Registro de riesgos PE / ·Tablero de seguimiento PE

| ID | WBS | Task | Type | Duration | Start | Finish | Predecessors | Total slack | Free slack | Resources | Work | Text2 |
| --- | --- | --- | --- | --- | --- | --- | --- | --- | --- | --- | --- | --- |
| 85 | 1.1.2.3 | **Reuniones de Comité con el Cliente** |  | 0.25d | 2005-10-21 | 2005-10-24 | 74 | 47.83d |  |  | 6h | No inicia |
| 86 | 1.1.2.3.1 | **Comité de Sistemas #1..n** |  | 0.25d | 2005-10-21 | 2005-10-24 |  | 47.83d |  |  | 6h | No inicia |
| 87 | 1.1.2.3.1.1 | Preparar comité de sistemas |  | 2h | 2005-10-21 | 2005-10-24 |  | 47.83d |  | AS | 2h | No inicia |
| 88 | 1.1.2.3.1.2 | Comité de Sistemas |  | 1h | 2005-10-21 | 2005-10-21 |  | 47.95d |  | AS; JS; Cliente | 3h | No inicia |
| 89 | 1.1.2.3.1.3 | Elaborar acta de comité de sistemas |  | 1h | 2005-10-21 | 2005-10-21 |  | 47.95d |  | AS | 1h | No inicia |
| 90 | 1.1.3 | **Cierre** |  | 1.51d? | 2005-12-27 | 2005-12-28 | 426 | 0d |  |  | 36.5h | No inicia |
| 91 | 1.1.3.1 | Revisión de Entregables del Proyecto | milestone | 0d | 2005-12-27 | 2005-12-27 |  | 0.5d | 0d | AS |  | No inicia |
| 92 | 1.1.3.2 | Etiquetado de Acta de cierre |  | 1d? | 2005-12-27 | 2005-12-28 | 91 | 0.5d | 0d |  |  | No inicia |
| 93 | 1.1.3.3 | Elaboracion de acta de cierre |  | 0.1h | 2005-12-28 | 2005-12-28 | 92 | 0.5d |  | AS | 0.1h | No inicia |
| 94 | 1.1.3.4 | **Relatorio de Proyectos** |  | 1.51d? | 2005-12-27 | 2005-12-28 |  | 0d |  |  | 36.4h | No inicia |
| 95 | 1.1.3.4.1 | Etiquetado relatorio de proyecto |  | 1d? | 2005-12-27 | 2005-12-28 |  | 0.51d |  |  |  | No inicia |
| 96 | 1.1.3.4.2 | Elaborar relatorio de proyecto |  | 0.1h | 2005-12-27 | 2005-12-27 |  | 0d |  | AS | 0.1h | No inicia |
| 97 | 1.1.3.4.3 | Revisión y ajustes de relatorio por el equipo del proyecto |  | 1d? | 2005-12-27 | 2005-12-28 | 96 | 0d |  | AS; AP | 16h | No inicia |
| 98 | 1.1.3.4.4 | Revisión de relatorio con los proyectos especiales |  | 0.5d? | 2005-12-28 | 2005-12-28 | 97 | 0d |  | AP; AS; JS; GP | 16h | No inicia |
| 99 | 1.1.3.4.5 | **Gestion de Configuracion** |  | 0.5d | 2005-12-27 | 2005-12-27 |  | 1.01d |  |  | 4.3h | No inicia |
| 100 | 1.1.3.4.5.1 | Solicitar auditoria de GC |  | 0.1h | 2005-12-27 | 2005-12-27 |  | 1.5d |  | AS | 0.1h | No inicia |
| 101 | 1.1.3.4.5.2 | Auditoria de Gestion de Configuracion de Proyecto Especial |  | 0.2h | 2005-12-27 | 2005-12-27 |  | 1.49d |  | GC | 0.2h | No inicia |
| 102 | 1.1.3.4.5.3 | Archivar registros del proyecto |  | 0.5d | 2005-12-27 | 2005-12-27 |  | 1.01d |  | GC | 4h | No inicia |
| 103 | 1.2 | **Procesos de Ingeniería** |  | 73.33d? | 2005-09-15 | 2005-12-27 |  | 0d |  |  | 1878.1h | No inicia |
| 104 | 1.2.1 | **Incepción** |  | 7.01d? | 2005-09-15 | 2005-09-26 | 8 | 0d |  |  | 72.1h | No inicia |
| 105 | 1.2.1.1 | **Iteración I1** |  | 7.01d? | 2005-09-15 | 2005-09-26 |  | 0d |  |  | 72.1h | No inicia |
| 106 | 1.2.1.1.1 | **Flujo de Trabajo de Modelamiento de Negocio** |  | 2d? | 2005-09-15 | 2005-09-16 |  | 0d |  |  | 24h | No inicia |
| 107 | 1.2.1.1.1.1 | **Levantamiento de información** |  | 2d? | 2005-09-15 | 2005-09-16 |  | 0d |  |  | 16h | No inicia |
| 108 | 1.2.1.1.1.1.1 | Reunión con usuario 01 .. N |  | 1d? | 2005-09-15 | 2005-09-15 |  | 0d |  | AS | 8h | No inicia |
| 109 | 1.2.1.1.1.1.2 | Proceso de la información levantada 01 .. N |  | 1d? | 2005-09-16 | 2005-09-16 | 108 | 0d |  | AS | 8h | No inicia |
| 110 | 1.2.1.1.1.2 | Etiquetado de modelo de negocio |  | 0.1h | 2005-09-15 | 2005-09-15 |  | 7d |  |  |  | No inicia |
| 111 | 1.2.1.1.1.3 | Elaboración de modelo de negocio |  | 1d? | 2005-09-15 | 2005-09-15 |  | 1d |  | AS | 8h | No inicia |

Notes:
- 85: 7.3.12 / Actividades a realizar por cada reunión de Comité con el Cliente: / - Reunión con equipo de trabajo para preparar informe para el Comité / - Acta de Comité del proyecto
- 90: PASCO
- 94: Datos generales del Proyecto / Actualización del Plan General del Proyecto / Actualización del TSP / Análisis Económico del Proyecto (HR invertidas) / Análisis del Cliente / Análisis del Plan de Gestión y Control de Riesgo / Aporte Técnicos o Metodológicos para otros Proyectos / Inclusión de Evaluación del personal / Acta de Conformidad del Servicio / Carta Antes del Plazo / Aprobación del Relatorio por el Gerente de Proyecto / Exposición del Relatorio a los demás Líderes de Proyecto
- 101: Seccion Cierre de proyecto
- 103: RD,PI,TS,VER,VAL, / PPQA, CON,
- 111: Referencia al estado actual de los procesos.

| ID | WBS | Task | Duration | Start | Finish | Predecessors | Total slack | Resources | Work | Text2 |
| --- | --- | --- | --- | --- | --- | --- | --- | --- | --- | --- |
| 112 | 1.2.1.1.2 | **Flujo de Trabajo de Requerimientos** | 4.01d? | 2005-09-19 | 2005-09-23 | 107 | 0d |  | 40.1h | No inicia |
| 113 | 1.2.1.1.2.1 | **Elaboarcion de Glosario de terminos** | 1d? | 2005-09-19 | 2005-09-19 | 24 | 3.01d | AS | 8h | No inicia |
| 114 | 1.2.1.1.2.1.1 | Etiquetado de item: glosario de terminos | 1d? | 2005-09-19 | 2005-09-19 |  | 3.01d |  |  | No inicia |
| 115 | 1.2.1.1.2.1.2 | Elaboración de Glosario de Terminos | 1d? | 2005-09-19 | 2005-09-19 |  | 3.01d |  |  | No inicia |
| 116 | 1.2.1.1.2.2 | Actualizar el inventario de los casos de uso y actores | 1d? | 2005-09-19 | 2005-09-19 | 111 | 0d | AS | 8h | No inicia |
| 117 | 1.2.1.1.2.3 | Priorizar los casos de uso | 1d? | 2005-09-20 | 2005-09-20 | 116 | 0d | AS | 8h | No inicia |
| 118 | 1.2.1.1.2.4 | **Elaboración de documento de alcance** | 1.01d? | 2005-09-21 | 2005-09-22 | 117 | 0d | AS | 8.1h | No inicia |
| 119 | 1.2.1.1.2.4.1 | Etiquetado de item: documento de alcance | 0.1h | 2005-09-21 | 2005-09-21 |  | 0d |  |  | No inicia |
| 120 | 1.2.1.1.2.4.2 | Elaboración de documento de alcance | 1d? | 2005-09-21 | 2005-09-22 | 119 | 0d |  |  | No inicia |
| 121 | 1.2.1.1.2.5 | Elaborar la Matriz deTrazabilidad | 1d? | 2005-09-22 | 2005-09-23 | 120 | 0d | AS | 8h | No inicia |
| 122 | 1.2.1.1.3 | **Flujo de Trabajo de Gestión** | 1d? | 2005-09-23 | 2005-09-26 | 112 | 0d |  | 8h | No inicia |
| 123 | 1.2.1.1.3.1 | Elaboración del plan de iteraciones | 1d? | 2005-09-23 | 2005-09-26 |  | 0d | AS | 8h | No inicia |
| 124 | 1.2.2 | **Elaboración** | 17.51d? | 2005-10-20 | 2005-11-14 | 104, 3 | 0d |  | 929.6h | No inicia |
| 125 | 1.2.2.1 | **Iteración E1 (Análisis)** | 12.01d? | 2005-10-20 | 2005-11-07 |  | 0d |  | 501h | No inicia |
| 126 | 1.2.2.1.1 | **Flujo de Trabajo de Requerimientos** | 6.51d? | 2005-10-20 | 2005-10-28 |  | 0d |  | 64.1h | No inicia |
| 127 | 1.2.2.1.1.1 | **Levantamiento de información** | 1.5d? | 2005-10-20 | 2005-10-21 |  | 0d |  | 24h | No inicia |
| 128 | 1.2.2.1.1.1.1 | Reunión con usuario 01 .. N | 0.5d? | 2005-10-20 | 2005-10-20 |  | 0d | AS; Cliente | 8h | No inicia |
| 129 | 1.2.2.1.1.1.2 | Proceso de la información levantada 01 .. N | 1d? | 2005-10-20 | 2005-10-21 | 128 | 0d | AS; Cliente | 16h | No inicia |
| 130 | 1.2.2.1.1.2 | **Actualizacion de Glosario de Terminos** | 1.01d? | 2005-10-21 | 2005-10-24 | 127 | 0d | AS | 8.1h | No inicia |
| 131 | 1.2.2.1.1.2.1 | Etiquetar Glosario de Terminos | 0.1h | 2005-10-21 | 2005-10-21 |  | 0d |  |  | No inicia |
| 132 | 1.2.2.1.1.2.2 | Actualizacion de Glosario de Terminos | 1d? | 2005-10-21 | 2005-10-24 | 131 | 0d |  |  | No inicia |
| 133 | 1.2.2.1.1.3 | Actualizar el inventario de los casos de uso y actores | 1d? | 2005-10-24 | 2005-10-25 | 132 | 0d | AS | 8h | No inicia |
| 134 | 1.2.2.1.1.4 | Priorizar los casos de uso | 1d? | 2005-10-25 | 2005-10-26 | 133 | 0d | AS | 8h | No inicia |
| 135 | 1.2.2.1.1.5 | Elaborar diagrama de casos de uso. | 1d? | 2005-10-26 | 2005-10-27 | 134 | 0d | AS | 8h | No inicia |
| 136 | 1.2.2.1.1.6 | Describir requerimientos en los formatos de casos de uso | 1d? | 2005-10-27 | 2005-10-28 | 135 | 0d | AS | 8h | No inicia |

Notes:
- 113: resultado glosario de terminos
- 117: actualizar Lista maestra de requerimientos

| ID | WBS | Task | Duration | Start | Finish | Predecessors | Total slack | Free slack | Resources | Work | Text2 |
| --- | --- | --- | --- | --- | --- | --- | --- | --- | --- | --- | --- |
| 137 | 1.2.2.1.2 | **Flujo de Trabajo de Análisis** | 5.5d? | 2005-10-28 | 2005-11-07 | 126 | 0d |  |  | 200.3h | No inicia |
| 138 | 1.2.2.1.2.1 | **Documento de Análisis** | 5.5d? | 2005-10-28 | 2005-11-07 |  | 0d |  |  | 200.3h | No inicia |
| 139 | 1.2.2.1.2.1.1 | **Elaborar documento de Análisis** | 4d? | 2005-10-28 | 2005-11-03 |  | 1.5d |  |  | 48h | No inicia |
| 140 | 1.2.2.1.2.1.1.1 | Alternativas de Solución | 1d? | 2005-10-28 | 2005-10-31 |  | 4.5d |  | AS | 8h | No inicia |
| 141 | 1.2.2.1.2.1.1.2 | Elaboración de diagramas actividad y estado | 1d? | 2005-10-28 | 2005-10-31 |  | 1.5d | 0d | AS | 8h | No inicia |
| 142 | 1.2.2.1.2.1.1.3 | Construir prototipos de las interfaces de usuario. | 1d? | 2005-10-31 | 2005-11-01 | 141 | 1.5d | 0d | AS | 8h | No inicia |
| 143 | 1.2.2.1.2.1.1.4 | Revisión de interfases con el usuario | 1d? | 2005-11-01 | 2005-11-02 | 142 | 1.5d | 0d | AS; Cliente | 16h | No inicia |
| 144 | 1.2.2.1.2.1.1.5 | Identificar interfases con otros sistemas | 1d? | 2005-11-02 | 2005-11-03 | 143 | 1.5d |  | AS | 8h | No inicia |
| 145 | 1.2.2.1.2.1.1.6 | **Elaborar documento de analsis** | 1d? | 2005-10-28 | 2005-10-31 |  | 4.5d |  |  |  | No inicia |
| 146 | 1.2.2.1.2.1.1.6.1 | Etiquetar documento de analsis | 0.1h | 2005-10-28 | 2005-10-28 |  | 5.49d |  |  |  | No inicia |
| 147 | 1.2.2.1.2.1.1.6.2 | Elaborar documento de analsis | 1d? | 2005-10-28 | 2005-10-31 |  | 4.5d |  |  |  | No inicia |
| 148 | 1.2.2.1.2.1.2 | **Verificación** | 4d? | 2005-10-28 | 2005-11-03 |  | 0.46d |  |  | 40h | No inicia |
| 149 | 1.2.2.1.2.1.2.1 | **Revisión interna** | 1d? | 2005-10-28 | 2005-10-31 |  | 0.46d |  |  | 8h | No inicia |
| 150 | 1.2.2.1.2.1.2.1.1 | Revisión funcional (Interna) del Doc. Análisis (C/U, diagramas y prototipo). | 1d? | 2005-10-28 | 2005-10-31 |  | 0.46d | 0d | AS | 8h | No inicia |
| 151 | 1.2.2.1.2.1.2.2 | **Revisión de pares** | 3d? | 2005-10-31 | 2005-11-03 | 150 | 1.5d |  |  | 32h | No inicia |
| 152 | 1.2.2.1.2.1.2.2.1 | Preparación de Revisión de Pares | 1d? | 2005-10-31 | 2005-11-01 |  | 1.5d | 0d | LERP | 8h | No inicia |
| 153 | 1.2.2.1.2.1.2.2.2 | Ejecución de la Revisión de Pares | 1d? | 2005-11-01 | 2005-11-02 | 152 | 1.5d | 0d | RP; AS | 16h | No inicia |
| 154 | 1.2.2.1.2.1.2.2.3 | Cierre de la revisión de pares | 1d? | 2005-11-02 | 2005-11-03 | 153 | 1.5d |  | LERP | 8h | No inicia |
| 155 | 1.2.2.1.2.1.3 | **Gestion de Configuracion** | 0.03d | 2005-10-28 | 2005-10-28 |  | 5.47d |  |  | 0.3h | No inicia |
| 156 | 1.2.2.1.2.1.3.1 | Solicitar auditoria de GC | 0.1h | 2005-10-28 | 2005-10-28 |  | 5.49d |  | AS | 0.1h | No inicia |
| 157 | 1.2.2.1.2.1.3.2 | Auditoria de GC de Proyecto Especial | 0.2h | 2005-10-28 | 2005-10-28 |  | 5.47d |  | GC | 0.2h | No inicia |
| 158 | 1.2.2.1.2.1.4 | **Aseguramiento de calidad** | 5d? | 2005-10-28 | 2005-11-04 |  | 0.5d |  |  | 60h | No inicia |
| 159 | 1.2.2.1.2.1.4.1 | Preparar las actividades de QA. | 1d? | 2005-10-28 | 2005-10-31 |  | 0.5d | 0d | AC | 8h | No inicia |
| 160 | 1.2.2.1.2.1.4.2 | Ejecutar la Revisión de QA | 1d? | 2005-10-31 | 2005-11-01 | 159 | 0.5d | 0d | AC | 8h | No inicia |
| 161 | 1.2.2.1.2.1.4.3 | Ejecutar la Revisión de procesos | 0.25d | 2005-11-01 | 2005-11-01 | 160 | 3.25d |  | AC; AS | 4h | No inicia |
| 162 | 1.2.2.1.2.1.4.4 | Levantar la No Conformidad | 1d? | 2005-11-01 | 2005-11-02 | 160 | 0.5d | 0d | AS; AP | 16h | No inicia |
| 163 | 1.2.2.1.2.1.4.5 | Realizar el seguimiento | 1d? | 2005-11-02 | 2005-11-03 | 162 | 0.5d | 0d | AC; AS | 16h | No inicia |
| 164 | 1.2.2.1.2.1.4.6 | Elaborar e Informar las actividades de QA a la Gerencia del Servicio | 1d? | 2005-11-03 | 2005-11-04 | 163 | 0.5d |  | AC | 8h | No inicia |

Notes:
- 140: Analizar y documentar alternativas de solucion
- 148: Verficación

| ID | WBS | Task | Duration | Start | Finish | Predecessors | Total slack | Free slack | Resources | Work | Text2 |
| --- | --- | --- | --- | --- | --- | --- | --- | --- | --- | --- | --- |
| 165 | 1.2.2.1.2.1.5 | **Validación** | 5.5d | 2005-10-28 | 2005-11-07 |  | 0d |  |  | 52h | No inicia |
| 166 | 1.2.2.1.2.1.5.1 | Revisión por parte de ONP | 3d | 2005-10-28 | 2005-11-02 |  | 0d |  | Cliente | 24h | No inicia |
| 167 | 1.2.2.1.2.1.5.2 | Levantamiento de observaciones | 1d | 2005-11-02 | 2005-11-03 | 166 | 0d |  | AS | 8h | No inicia |
| 168 | 1.2.2.1.2.1.5.3 | Revisión de Calidad de las observaciones | 0.5d | 2005-11-03 | 2005-11-04 | 167 | 0d |  | AC | 4h | No inicia |
| 169 | 1.2.2.1.2.1.5.4 | Revisión final y aprobacion de ONP | 1d | 2005-11-04 | 2005-11-07 | 168 | 0d |  | Cliente; AS | 16h | No inicia |
| 170 | 1.2.2.1.2.1.5.5 | Actividad de Gestión de la Configuración: Etiquetar Plan: aprobado ONP y generar Baseline | 0.3h | 2005-10-28 | 2005-10-28 |  | 5.46d |  |  |  | No inicia |
| 171 | 1.2.2.1.3 | **Flujo de Trabajo de Diseño** | 5.5d? | 2005-10-20 | 2005-10-27 |  | 6.51d |  |  | 176.3h | No inicia |
| 172 | 1.2.2.1.3.1 | **Documento de Implementación (Arquitectura)** | 5.5d? | 2005-10-20 | 2005-10-27 |  | 6.51d |  |  | 176.3h | No inicia |
| 173 | 1.2.2.1.3.1.1 | **Elaborar documento de Implementación** | 1d? | 2005-10-20 | 2005-10-21 |  | 11.01d |  |  | 24h | No inicia |
| 174 | 1.2.2.1.3.1.1.1 | Etiquetar documento de Implementacion | 0.1h | 2005-10-20 | 2005-10-20 |  | 12d |  |  |  | No inicia |
| 175 | 1.2.2.1.3.1.1.2 | Definición de arquitectura técnica | 1d? | 2005-10-20 | 2005-10-21 |  | 11.01d |  | AS | 8h | No inicia |
| 176 | 1.2.2.1.3.1.1.3 | Elaborar Modelo de Componentes | 1d? | 2005-10-20 | 2005-10-21 |  | 11.01d |  | AS | 8h | No inicia |
| 177 | 1.2.2.1.3.1.1.4 | Elaborar Modelo de Distribución | 1d? | 2005-10-20 | 2005-10-21 |  | 11.01d |  | AS | 8h | No inicia |
| 178 | 1.2.2.1.3.1.2 | **Verificación** | 4d? | 2005-10-20 | 2005-10-26 |  | 8.01d |  |  | 40h | No inicia |
| 179 | 1.2.2.1.3.1.2.1 | **Revisión interna** | 1d? | 2005-10-20 | 2005-10-21 |  | 8.01d |  |  | 8h | No inicia |
| 180 | 1.2.2.1.3.1.2.1.1 | Revisión funcional (Interna) del Doc. De Implementación | 1d? | 2005-10-20 | 2005-10-21 |  | 8.01d | 0d | AS | 8h | No inicia |
| 181 | 1.2.2.1.3.1.2.2 | **Revisión de pares** | 3d? | 2005-10-21 | 2005-10-26 | 180 | 8.01d |  |  | 32h | No inicia |
| 182 | 1.2.2.1.3.1.2.2.1 | Preparación de Revisión de Pares | 1d? | 2005-10-21 | 2005-10-24 |  | 8.01d | 0d | LERP | 8h | No inicia |
| 183 | 1.2.2.1.3.1.2.2.2 | Ejecución de la Revisión de Pares | 1d? | 2005-10-24 | 2005-10-25 | 182 | 8.01d | 0d | RP; AS | 16h | No inicia |
| 184 | 1.2.2.1.3.1.2.2.3 | Cierre de la revisión de pares | 1d? | 2005-10-25 | 2005-10-26 | 183 | 8.01d |  | LERP | 8h | No inicia |
| 185 | 1.2.2.1.3.1.3 | **Gestion de Configuracion** | 0.03d | 2005-10-20 | 2005-10-20 |  | 11.99d |  |  | 0.3h | No inicia |
| 186 | 1.2.2.1.3.1.3.1 | Solicitar auditoria de GC | 0.1h | 2005-10-20 | 2005-10-20 |  | 12d |  | AS | 0.1h | No inicia |
| 187 | 1.2.2.1.3.1.3.2 | Auditoria de GC de Proyecto Especial | 0.2h | 2005-10-20 | 2005-10-20 |  | 11.99d |  | GC | 0.2h | No inicia |
| 188 | 1.2.2.1.3.1.4 | **Aseguramiento de calidad** | 5d? | 2005-10-20 | 2005-10-27 |  | 7.01d |  |  | 60h | No inicia |
| 189 | 1.2.2.1.3.1.4.1 | Preparar las actividades de QA. | 1d? | 2005-10-20 | 2005-10-21 |  | 7.01d | 0d | AC | 8h | No inicia |
| 190 | 1.2.2.1.3.1.4.2 | Ejecutar la Revisión de QA | 1d? | 2005-10-21 | 2005-10-24 | 189 | 7.01d | 0d | AC | 8h | No inicia |
| 191 | 1.2.2.1.3.1.4.3 | Ejecutar la Revisión de procesos | 0.25d | 2005-10-24 | 2005-10-24 | 190 | 9.76d |  | AC; AS | 4h | No inicia |
| 192 | 1.2.2.1.3.1.4.4 | Levantar la No Conformidad | 1d? | 2005-10-24 | 2005-10-25 | 190 | 7.01d | 0d | AS; AP | 16h | No inicia |
| 193 | 1.2.2.1.3.1.4.5 | Realizar el seguimiento | 1d? | 2005-10-25 | 2005-10-26 | 192 | 7.01d | 0d | AC; AS | 16h | No inicia |
| 194 | 1.2.2.1.3.1.4.6 | Elaborar e Informar las actividades de QA a la Gerencia del Servicio | 1d? | 2005-10-26 | 2005-10-27 | 193 | 7.01d |  | AC | 8h | No inicia |

Notes:
- 165: Revisión Funcional y Aprobación del cliente del Doc. Análisis (C/U, diagramas y prototipo)
- 168: Esta actividad esta referida solo a la revisión de las observaciones emitidas por ONP que ya han sido levantadas.
- 178: Verficación

| ID | WBS | Task | Duration | Start | Finish | Predecessors | Total slack | Free slack | Resources | Work | Text2 |
| --- | --- | --- | --- | --- | --- | --- | --- | --- | --- | --- | --- |
| 195 | 1.2.2.1.3.1.5 | **Validación** | 5.5d | 2005-10-20 | 2005-10-27 |  | 6.51d |  |  | 52h | No inicia |
| 196 | 1.2.2.1.3.1.5.1 | Revisión por parte de ONP | 3d | 2005-10-20 | 2005-10-25 |  | 6.51d | 0d | Cliente | 24h | No inicia |
| 197 | 1.2.2.1.3.1.5.2 | Levantamiento de observaciones | 1d | 2005-10-25 | 2005-10-26 | 196 | 6.51d | 0d | AS | 8h | No inicia |
| 198 | 1.2.2.1.3.1.5.3 | Revisión de Calidad de las observaciones | 0.5d | 2005-10-26 | 2005-10-26 | 197 | 6.51d | 0d | AC | 4h | No inicia |
| 199 | 1.2.2.1.3.1.5.4 | Revisión final de ONP | 1d | 2005-10-26 | 2005-10-27 | 198 | 6.51d |  | Cliente; AS | 16h | No inicia |
| 200 | 1.2.2.1.3.1.5.5 | Actividad de Gestión de la Configuración: Etiquetar doc de implementacion: aprobado ONP y generar Baseline | 0.3h | 2005-10-20 | 2005-10-20 |  | 11.97d |  |  |  | No inicia |
| 201 | 1.2.2.1.4 | **Flujo de Trabajo de Gestión** | 11.55d? | 2005-10-20 | 2005-11-04 |  | 0.46d |  |  | 60.3h | No inicia |
| 202 | 1.2.2.1.4.1 | Actualizar la Matriz de Trazabilidad (relacionando los requerimientos de la Lista maestra de requerimientos y los casos de uso). | 1d? | 2005-10-31 | 2005-11-01 | 150 | 0.46d | 0d | AS | 8h | No inicia |
| 203 | 1.2.2.1.4.2 | **Evaluación de la iteración** | 1d | 2005-11-01 | 2005-11-02 | 202 | 0.46d |  | AS | 20h | No inicia |
| 204 | 1.2.2.1.4.2.1 | Etiquetar informe de iteraciones | 0.1h | 2005-11-01 | 2005-11-01 |  | 3.49d |  |  |  | No inicia |
| 205 | 1.2.2.1.4.2.2 | Elaboración del informe de iteraciones | 0.5d | 2005-11-01 | 2005-11-02 |  | 0.46d | 0d | AS | 4h | No inicia |
| 206 | 1.2.2.1.4.2.3 | Revisión por parte del Jefe de Sistemas | 0.5d | 2005-11-02 | 2005-11-02 | 205 | 0.46d | 0d | JS; AS | 8h | No inicia |
| 207 | 1.2.2.1.4.3 | **Planificación de la iteración** | 2.01d? | 2005-11-02 | 2005-11-04 |  | 0.46d |  |  | 16h | No inicia |
| 208 | 1.2.2.1.4.3.1 | Etiquetar plan de iteraciones | 0.1h | 2005-11-02 | 2005-11-02 | 206 | 0.46d | 0d |  |  | No inicia |
| 209 | 1.2.2.1.4.3.2 | Actualización del plan de iteraciones | 1d | 2005-11-02 | 2005-11-03 | 208 | 0.46d | 0d | AS | 8h | No inicia |
| 210 | 1.2.2.1.4.3.3 | Planificar el cronograma de la siguiente iteración | 1d? | 2005-11-03 | 2005-11-04 | 209 | 0.46d | 0d | AS | 8h | No inicia |
| 211 | 1.2.2.1.4.4 | **Gestion de Configuracion** | 0.03d | 2005-11-04 | 2005-11-04 | 210 | 0.46d |  |  | 0.3h | No inicia |
| 212 | 1.2.2.1.4.4.1 | Solicitar auditoria de GC | 0.1h | 2005-11-04 | 2005-11-04 |  | 0.47d |  | AS | 0.1h | No inicia |
| 213 | 1.2.2.1.4.4.2 | Auditoria de GC de Proyecto Especial | 0.2h | 2005-11-04 | 2005-11-04 |  | 0.46d |  | GC | 0.2h | No inicia |
| 214 | 1.2.2.1.4.5 | Revisión y aprobacion de ONP del informe y plan de iteraciones | 1d? | 2005-10-20 | 2005-10-21 |  | 11.01d |  | AS; Cliente | 16h | No inicia |
| 215 | 1.2.2.1.4.6 | Actividad de Gestión de la Configuración: Etiquetar doc de implementacion: aprobado ONP y generar Baseline | 0.3h | 2005-10-20 | 2005-10-20 |  | 11.97d |  |  |  | No inicia |
| 216 | 1.2.2.2 | **Iteración E2 (Diseño)** | 5.5d? | 2005-11-07 | 2005-11-14 | 125 | 0d |  |  | 428.6h | No inicia |
| 217 | 1.2.2.2.1 | **Flujo de Trabajo de Diseño** | 5.5d? | 2005-11-07 | 2005-11-14 |  | 0d |  |  | 376.3h | No inicia |
| 218 | 1.2.2.2.1.1 | **Modelo de datos** | 5.5d? | 2005-11-07 | 2005-11-14 |  | 0d |  |  | 180h | No inicia |
| 219 | 1.2.2.2.1.1.1 | **Elaborar modelo de datos** | 2d? | 2005-11-07 | 2005-11-09 |  | 3.5d |  |  | 16h | No inicia |
| 220 | 1.2.2.2.1.1.1.1 | Diseñar la base de datos (lógico y físico) | 1d? | 2005-11-07 | 2005-11-08 |  | 3.5d | 0d | AS | 8h | No inicia |
| 221 | 1.2.2.2.1.1.1.2 | Elaborar Diccionario de datos | 1d? | 2005-11-08 | 2005-11-09 | 220 | 3.5d |  | AS | 8h | No inicia |

Notes:
- 195: Revisión Funcional y Aprobación del cliente del Doc. Análisis (C/U, diagramas y prototipo)
- 198: Esta actividad esta referida solo a la revisión de las observaciones emitidas por ONP que ya han sido levantadas.
- 205: El resultado de la actividad es el informe de iteraciones / Se asume que el cambio ya se gestiono

| ID | WBS | Task | Duration | Start | Finish | Predecessors | Total slack | Free slack | Resources | Work | Text2 |
| --- | --- | --- | --- | --- | --- | --- | --- | --- | --- | --- | --- |
| 222 | 1.2.2.2.1.1.2 | **Verificación** | 4d? | 2005-11-07 | 2005-11-11 |  | 1.5d |  |  | 40h | No inicia |
| 223 | 1.2.2.2.1.1.2.1 | **Revisión interna** | 1d? | 2005-11-07 | 2005-11-08 |  | 1.5d |  |  | 8h | No inicia |
| 224 | 1.2.2.2.1.1.2.1.1 | Revisión Interna del Modelo de Datos | 1d? | 2005-11-07 | 2005-11-08 |  | 1.5d | 0d | AS | 8h | No inicia |
| 225 | 1.2.2.2.1.1.2.2 | **Revisión de pares** | 3d? | 2005-11-08 | 2005-11-11 | 224 | 1.5d |  |  | 32h | No inicia |
| 226 | 1.2.2.2.1.1.2.2.1 | Preparación de Revisión de Pares | 1d? | 2005-11-08 | 2005-11-09 |  | 1.5d | 0d | LERP | 8h | No inicia |
| 227 | 1.2.2.2.1.1.2.2.2 | Ejecución de la Revisión de Pares | 1d? | 2005-11-09 | 2005-11-10 | 226 | 1.5d | 0d | RP; AS | 16h | No inicia |
| 228 | 1.2.2.2.1.1.2.2.3 | Cierre de la revisión de pares | 1d? | 2005-11-10 | 2005-11-11 | 227 | 1.5d |  | LERP | 8h | No inicia |
| 229 | 1.2.2.2.1.1.3 | **Aseguramiento de calidad** | 5d? | 2005-11-07 | 2005-11-14 |  | 0.5d |  |  | 72h | No inicia |
| 230 | 1.2.2.2.1.1.3.1 | Preparar las actividades de QA. | 1d? | 2005-11-07 | 2005-11-08 |  | 0.5d | 0d | AC | 8h | No inicia |
| 231 | 1.2.2.2.1.1.3.2 | Ejecutar la Revisión de QA Producto | 1d | 2005-11-08 | 2005-11-09 | 230 | 0.5d | 0d | AC | 8h | No inicia |
| 232 | 1.2.2.2.1.1.3.3 | Ejecutar la Revisión de QA procesos | 1d | 2005-11-09 | 2005-11-10 | 231 | 2.5d |  | AC; AS | 16h | No inicia |
| 233 | 1.2.2.2.1.1.3.4 | Levantar la No Conformidad | 1d? | 2005-11-09 | 2005-11-10 | 231 | 0.5d | 0d | AS; AP | 16h | No inicia |
| 234 | 1.2.2.2.1.1.3.5 | Realizar el seguimiento | 1d? | 2005-11-10 | 2005-11-11 | 233 | 0.5d | 0d | AC; AS | 16h | No inicia |
| 235 | 1.2.2.2.1.1.3.6 | Elaborar e Informar las actividades de QA a la Gerencia del Servicio | 1d? | 2005-11-11 | 2005-11-14 | 234 | 0.5d |  | AC | 8h | No inicia |
| 236 | 1.2.2.2.1.1.4 | **Validación** | 5.5d | 2005-11-07 | 2005-11-14 |  | 0d |  |  | 52h | No inicia |
| 237 | 1.2.2.2.1.1.4.1 | Revisión por parte de ONP | 3d | 2005-11-07 | 2005-11-10 |  | 0d |  | Cliente | 24h | No inicia |
| 238 | 1.2.2.2.1.1.4.2 | Levantamiento de observaciones | 1d | 2005-11-10 | 2005-11-11 | 237 | 0d |  | AS | 8h | No inicia |
| 239 | 1.2.2.2.1.1.4.3 | Revisión de Calidad de las observaciones | 0.5d | 2005-11-11 | 2005-11-11 | 238 | 0d |  | AC | 4h | No inicia |
| 240 | 1.2.2.2.1.1.4.4 | Revisión final de ONP | 1d | 2005-11-11 | 2005-11-14 | 239 | 0d |  | Cliente; AS | 16h | No inicia |
| 241 | 1.2.2.2.1.2 | **Documento de Diseño** | 5.5d? | 2005-11-07 | 2005-11-14 |  | 0d |  |  | 196.3h | No inicia |
| 242 | 1.2.2.2.1.2.1 | **Elaborar documento de diseño** | 2d? | 2005-11-07 | 2005-11-09 |  | 3.5d |  |  | 32h | No inicia |
| 243 | 1.2.2.2.1.2.1.1 | Etiquetar documento de diseño | 0.1h | 2005-11-07 | 2005-11-07 |  | 5.49d |  |  |  | No inicia |
| 244 | 1.2.2.2.1.2.1.2 | Identificar elementos de diseño | 1d? | 2005-11-07 | 2005-11-08 |  | 3.5d | 0d | AS | 8h | No inicia |
| 245 | 1.2.2.2.1.2.1.3 | Definir interfases con otros sistemas | 1d? | 2005-11-08 | 2005-11-09 | 244 | 3.5d |  | AS | 8h | No inicia |
| 246 | 1.2.2.2.1.2.1.4 | Elaborar diagrama de clases de diseño | 1d? | 2005-11-07 | 2005-11-08 |  | 3.5d | 0d | AS | 8h | No inicia |
| 247 | 1.2.2.2.1.2.1.5 | Realización de los C/U | 1d? | 2005-11-08 | 2005-11-09 | 246 | 3.5d |  | AS | 8h | No inicia |

Notes:
- 222: Verficación
- 236: Revisión Funcional y Aprobación del cliente del Doc. Análisis (C/U, diagramas y prototipo)
- 239: Esta actividad esta referida solo a la revisión de las observaciones emitidas por ONP que ya han sido levantadas.

| ID | WBS | Task | Duration | Start | Finish | Predecessors | Total slack | Free slack | Resources | Work | Text2 |
| --- | --- | --- | --- | --- | --- | --- | --- | --- | --- | --- | --- |
| 248 | 1.2.2.2.1.2.2 | **Verificación** | 4d? | 2005-11-07 | 2005-11-11 |  | 1.5d |  |  | 40h | No inicia |
| 249 | 1.2.2.2.1.2.2.1 | **Revisión interna** | 1d? | 2005-11-07 | 2005-11-08 |  | 1.5d |  |  | 8h | No inicia |
| 250 | 1.2.2.2.1.2.2.1.1 | Revisión Interna del Modelo de Datos | 1d? | 2005-11-07 | 2005-11-08 |  | 1.5d | 0d | AS | 8h | No inicia |
| 251 | 1.2.2.2.1.2.2.2 | **Revisión de pares** | 3d? | 2005-11-08 | 2005-11-11 | 250 | 1.5d |  |  | 32h | No inicia |
| 252 | 1.2.2.2.1.2.2.2.1 | Preparación de Revisión de Pares | 1d? | 2005-11-08 | 2005-11-09 |  | 1.5d | 0d | LERP | 8h | No inicia |
| 253 | 1.2.2.2.1.2.2.2.2 | Ejecución de la Revisión de Pares | 1d? | 2005-11-09 | 2005-11-10 | 252 | 1.5d | 0d | RP; AS | 16h | No inicia |
| 254 | 1.2.2.2.1.2.2.2.3 | Cierre de la revisión de pares | 1d? | 2005-11-10 | 2005-11-11 | 253 | 1.5d |  | LERP | 8h | No inicia |
| 255 | 1.2.2.2.1.2.3 | **Gestion de Configuracion** | 0.03d | 2005-11-07 | 2005-11-07 |  | 5.47d |  |  | 0.3h | No inicia |
| 256 | 1.2.2.2.1.2.3.1 | Solicitar auditoria de GC | 0.1h | 2005-11-07 | 2005-11-07 |  | 5.49d |  | AS | 0.1h | No inicia |
| 257 | 1.2.2.2.1.2.3.2 | Auditoria de GC de Proyecto Especial | 0.2h | 2005-11-07 | 2005-11-07 |  | 5.47d |  | GC | 0.2h | No inicia |
| 258 | 1.2.2.2.1.2.4 | **Aseguramiento de calidad** | 5d? | 2005-11-07 | 2005-11-14 |  | 0.5d |  |  | 72h | No inicia |
| 259 | 1.2.2.2.1.2.4.1 | Preparar las actividades de QA. | 1d? | 2005-11-07 | 2005-11-08 |  | 0.5d | 0d | AC | 8h | No inicia |
| 260 | 1.2.2.2.1.2.4.2 | Ejecutar la Revisión de QA Producto | 1d | 2005-11-08 | 2005-11-09 | 259 | 0.5d | 0d | AC | 8h | No inicia |
| 261 | 1.2.2.2.1.2.4.3 | Ejecutar la Revisión de QA procesos | 1d | 2005-11-09 | 2005-11-10 | 260 | 2.5d |  | AC; AS | 16h | No inicia |
| 262 | 1.2.2.2.1.2.4.4 | Levantar la No Conformidad | 1d? | 2005-11-09 | 2005-11-10 | 260 | 0.5d | 0d | AS; AP | 16h | No inicia |
| 263 | 1.2.2.2.1.2.4.5 | Realizar el seguimiento | 1d? | 2005-11-10 | 2005-11-11 | 262 | 0.5d | 0d | AC; AS | 16h | No inicia |
| 264 | 1.2.2.2.1.2.4.6 | Elaborar e Informar las actividades de QA a la Gerencia del Servicio | 1d? | 2005-11-11 | 2005-11-14 | 263 | 0.5d |  | AC | 8h | No inicia |
| 265 | 1.2.2.2.1.2.5 | **Validación** | 5.5d | 2005-11-07 | 2005-11-14 |  | 0d |  |  | 52h | No inicia |
| 266 | 1.2.2.2.1.2.5.1 | Revisión por parte de ONP | 3d | 2005-11-07 | 2005-11-10 |  | 0d |  | Cliente | 24h | No inicia |
| 267 | 1.2.2.2.1.2.5.2 | Levantamiento de observaciones | 1d | 2005-11-10 | 2005-11-11 | 266 | 0d |  | AS | 8h | No inicia |
| 268 | 1.2.2.2.1.2.5.3 | Revisión de Calidad de las observaciones | 0.5d | 2005-11-11 | 2005-11-11 | 267 | 0d |  | AC | 4h | No inicia |
| 269 | 1.2.2.2.1.2.5.4 | Revisión final de ONP | 1d | 2005-11-11 | 2005-11-14 | 268 | 0d |  | Cliente; AS | 16h | No inicia |
| 270 | 1.2.2.2.1.2.5.5 | Actividad de Gestión de la Configuración: Etiquetar doc de implementacion: aprobado ONP y generar Baseline | 0.3h | 2005-11-07 | 2005-11-07 |  | 5.46d |  |  |  | No inicia |
| 271 | 1.2.2.2.2 | **Flujo de Trabajo de Gestión** | 2.02d? | 2005-11-07 | 2005-11-09 |  | 3.48d |  |  | 52.3h | No inicia |
| 272 | 1.2.2.2.2.1 | Actualizar la Matriz de Trazabilidad | 1d? | 2005-11-07 | 2005-11-08 |  | 3.5d | 0d | AS | 8h | No inicia |

Notes:
- 248: Verficación
- 265: Revisión Funcional y Aprobación del cliente del Doc. Análisis (C/U, diagramas y prototipo)
- 268: Esta actividad esta referida solo a la revisión de las observaciones emitidas por ONP que ya han sido levantadas.
- 272: ( relacionando los requerimientos de la Lista maestra de requerimientos y los casos de uso)

| ID | WBS | Task | Duration | Start | Finish | Predecessors | Total slack | Free slack | Resources | Work | Text2 |
| --- | --- | --- | --- | --- | --- | --- | --- | --- | --- | --- | --- |
| 273 | 1.2.2.2.2.2 | **Evaluación de la iteración** | 1d | 2005-11-08 | 2005-11-09 | 272 | 3.5d |  | AS | 20h | No inicia |
| 274 | 1.2.2.2.2.2.1 | Etiquetar informe de iteraciones | 0.1h | 2005-11-08 | 2005-11-08 |  | 4.49d |  |  |  | No inicia |
| 275 | 1.2.2.2.2.2.2 | Elaboración del informe de iteraciones | 0.5d | 2005-11-08 | 2005-11-08 |  | 3.5d | 0d | AS | 4h | No inicia |
| 276 | 1.2.2.2.2.2.3 | Revisión por parte del Jefe de Sistemas | 0.5d | 2005-11-08 | 2005-11-09 | 275 | 3.5d |  | JS; AS | 8h | No inicia |
| 277 | 1.2.2.2.2.3 | **Planificación de la iteración** | 2d? | 2005-11-07 | 2005-11-09 |  | 3.48d |  |  | 16h | No inicia |
| 278 | 1.2.2.2.2.3.1 | Etiquetar plan de iteraciones | 0.1h | 2005-11-07 | 2005-11-07 |  | 5.49d |  |  |  | No inicia |
| 279 | 1.2.2.2.2.3.2 | Actualización del plan de iteraciones | 1d | 2005-11-07 | 2005-11-08 |  | 3.48d | 0d | AS | 8h | No inicia |
| 280 | 1.2.2.2.2.3.3 | Planificar el cronograma de la siguiente iteración | 1d? | 2005-11-08 | 2005-11-09 | 279 | 3.48d | 0d | AS | 8h | No inicia |
| 281 | 1.2.2.2.2.4 | **Gestion de Configuracion** | 0.03d | 2005-11-09 | 2005-11-09 | 280 | 3.48d |  |  | 0.3h | No inicia |
| 282 | 1.2.2.2.2.4.1 | Solicitar auditoria de GC | 0.1h | 2005-11-09 | 2005-11-09 |  | 3.49d |  | AS | 0.1h | No inicia |
| 283 | 1.2.2.2.2.4.2 | Auditoria de GC de Proyecto Especial | 0.2h | 2005-11-09 | 2005-11-09 |  | 3.48d |  | GC | 0.2h | No inicia |
| 284 | 1.2.2.2.2.5 | Revisión y aprobacion de cliente del plan de iteraciones actualizados | 1d? | 2005-11-07 | 2005-11-08 |  | 4.5d |  | Cliente | 8h | No inicia |
| 285 | 1.2.2.2.2.6 | Actividad de Gestión de la Configuración: Etiquetar doc de implementacion: aprobado ONP y generar Baseline | 0.3h | 2005-11-07 | 2005-11-07 |  | 5.46d |  |  |  | No inicia |
| 286 | 1.2.3 | **Construcción** | 17.14d? | 2005-11-14 | 2005-12-07 | 124 | 0d |  |  | 754.1h | No inicia |
| 287 | 1.2.3.1 | **Iteracion C1..n** | 17.14d? | 2005-11-14 | 2005-12-07 |  | 0d |  |  | 754.1h | No inicia |
| 288 | 1.2.3.1.1 | **Flujo de Trabajo de Requerimientos** | 1d? | 2005-11-14 | 2005-11-15 |  | 16.14d |  |  | 8h | No inicia |
| 289 | 1.2.3.1.1.1 | Actualizar la Matriz de Trazabilidad | 1d? | 2005-11-14 | 2005-11-15 |  | 16.14d |  | AS | 8h | No inicia |
| 290 | 1.2.3.1.2 | **Flujo de Trabajo de Implementación** | 4d? | 2005-11-14 | 2005-11-18 |  | 13.14d |  |  | 80h | No inicia |
| 291 | 1.2.3.1.2.1 | **Codificar los C/U correspondientes a esta iteración.** | 3d? | 2005-11-14 | 2005-11-17 |  | 13.14d | 0d | AP | 64h | No inicia |
| 292 | 1.2.3.1.2.1.1 | **Capa 1 / Subdivisión 1 / Módulo 1** | 3d? | 2005-11-14 | 2005-11-17 |  | 13.14d |  |  | 40h | No inicia |
| 293 | 1.2.3.1.2.1.1.1 | **Caso de uso 1 .. N** | 3d? | 2005-11-14 | 2005-11-17 |  | 13.14d |  |  | 40h | No inicia |
| 294 | 1.2.3.1.2.1.1.1.1 | Revisar análisis | 1d? | 2005-11-14 | 2005-11-15 |  | 15.14d |  | AS | 8h | No inicia |
| 295 | 1.2.3.1.2.1.1.1.2 | Revisar y Actualizar Diseño | 1d? | 2005-11-14 | 2005-11-15 |  | 15.14d |  | AS | 8h | No inicia |
| 296 | 1.2.3.1.2.1.1.1.3 | Implementación aplicativo | 1d? | 2005-11-14 | 2005-11-15 |  | 13.14d | 0d | AP | 8h | No inicia |
| 297 | 1.2.3.1.2.1.1.1.4 | Implementación objetos de base de datos | 1d? | 2005-11-15 | 2005-11-16 | 296 | 13.14d | 0d | AP | 8h | No inicia |
| 298 | 1.2.3.1.2.1.1.1.5 | Pruebas unitarias | 1d? | 2005-11-16 | 2005-11-17 | 297 | 13.14d |  | AP | 8h | No inicia |
| 299 | 1.2.3.1.2.2 | Integrar los C/U implementados. | 1d? | 2005-11-17 | 2005-11-18 | 291 | 13.14d |  | AP | 8h | No inicia |
| 300 | 1.2.3.1.2.3 | Pruebas unitarias de C/U integrados y ajustes | 1d? | 2005-11-14 | 2005-11-15 |  | 16.14d |  | AP | 8h | No inicia |

| ID | WBS | Task | Duration | Start | Finish | Predecessors | Total slack | Free slack | Resources | Work | Text2 |
| --- | --- | --- | --- | --- | --- | --- | --- | --- | --- | --- | --- |
| 301 | 1.2.3.1.3 | **Flujo de Trabajo de Pruebas** | 17.14d? | 2005-11-14 | 2005-12-07 |  | 0d |  |  | 601.7h | No inicia |
| 302 | 1.2.3.1.3.1 | **Elaborar Doc de Pruebas** | 5.5d? | 2005-11-14 | 2005-11-22 |  | 11.64d |  |  | 184.3h | No inicia |
| 303 | 1.2.3.1.3.1.1 | **Elaborar documentos de Pruebas** | 1d? | 2005-11-14 | 2005-11-15 |  | 16.14d |  |  | 32h | No inicia |
| 304 | 1.2.3.1.3.1.1.1 | **Elaborar documento Plan de Pruebas** | 1d? | 2005-11-14 | 2005-11-15 |  | 16.14d |  | AS | 8h | No inicia |
| 305 | 1.2.3.1.3.1.1.1.1 | Etiquetar documento Plan de Pruebas | 0.1h | 2005-11-14 | 2005-11-14 |  | 17.12d |  |  |  | No inicia |
| 306 | 1.2.3.1.3.1.1.1.2 | Elaborar documento Plan de Pruebas | 1d? | 2005-11-14 | 2005-11-15 |  | 16.14d |  |  |  | No inicia |
| 307 | 1.2.3.1.3.1.1.2 | **Elaborar documento de casos de pruebas** | 1d? | 2005-11-14 | 2005-11-15 |  | 16.14d |  | AP | 8h | No inicia |
| 308 | 1.2.3.1.3.1.1.2.1 | Etiquetar documento casos de pruebas | 0.1h | 2005-11-14 | 2005-11-14 |  | 17.12d |  |  |  | No inicia |
| 309 | 1.2.3.1.3.1.1.2.2 | Elaborar documento casos de pruebas | 1d? | 2005-11-14 | 2005-11-15 |  | 16.14d |  |  |  | No inicia |
| 310 | 1.2.3.1.3.1.1.3 | **Elaborar documento pruebas de ciclo completo** | 1d? | 2005-11-14 | 2005-11-15 |  | 16.14d |  | AP | 8h | No inicia |
| 311 | 1.2.3.1.3.1.1.3.1 | Etiquetar documento pruebas de ciclo completo | 1d? | 2005-11-14 | 2005-11-15 |  | 16.14d |  |  |  | No inicia |
| 312 | 1.2.3.1.3.1.1.3.2 | Elaborar documento pruebas de ciclo completo | 1d? | 2005-11-14 | 2005-11-15 |  | 16.14d |  |  |  | No inicia |
| 313 | 1.2.3.1.3.1.1.4 | Elaborar documento ficha de pruebas | 1d? | 2005-11-14 | 2005-11-15 |  | 16.14d |  | AP | 8h | No inicia |
| 314 | 1.2.3.1.3.1.1.5 | Elaboración del Documento de Pruebas Funcionales e Integrales | 1d? | 2005-11-14 | 2005-11-15 |  | 16.14d |  |  |  | No inicia |
| 315 | 1.2.3.1.3.1.1.6 | Elaboración del Documento de Pruebas de Seguridad y Conectividad | 1d? | 2005-11-14 | 2005-11-15 |  | 16.14d |  |  |  | No inicia |
| 316 | 1.2.3.1.3.1.1.7 | Elaboración del Documento de Pruebas de Sistemas | 1d? | 2005-11-14 | 2005-11-15 |  | 16.14d |  |  |  | No inicia |
| 317 | 1.2.3.1.3.1.1.8 | Elaboración del Documento de Pruebas de Esfuerzo | 1d? | 2005-11-14 | 2005-11-15 |  | 16.14d |  |  |  | No inicia |
| 318 | 1.2.3.1.3.1.2 | **Verificación** | 4d? | 2005-11-14 | 2005-11-18 |  | 13.14d |  |  | 40h | No inicia |
| 319 | 1.2.3.1.3.1.2.1 | **Revisión interna** | 1d? | 2005-11-14 | 2005-11-15 |  | 13.14d |  |  | 8h | No inicia |
| 320 | 1.2.3.1.3.1.2.1.1 | Revisión funcional de los documentos de prueba | 1d? | 2005-11-14 | 2005-11-15 |  | 13.14d | 0d | AS | 8h | No inicia |
| 321 | 1.2.3.1.3.1.2.2 | **Revisión de pares** | 3d? | 2005-11-15 | 2005-11-18 | 320 | 13.14d |  |  | 32h | No inicia |
| 322 | 1.2.3.1.3.1.2.2.1 | Preparación de Revisión de Pares | 1d? | 2005-11-15 | 2005-11-16 |  | 13.14d | 0d | LERP | 8h | No inicia |
| 323 | 1.2.3.1.3.1.2.2.2 | Ejecución de la Revisión de Pares | 1d? | 2005-11-16 | 2005-11-17 | 322 | 13.14d | 0d | RP; AS | 16h | No inicia |
| 324 | 1.2.3.1.3.1.2.2.3 | Cierre de la revisión de pares | 1d? | 2005-11-17 | 2005-11-18 | 323 | 13.14d |  | LERP | 8h | No inicia |

| ID | WBS | Task | Duration | Start | Finish | Predecessors | Total slack | Free slack | Resources | Work | Text2 |
| --- | --- | --- | --- | --- | --- | --- | --- | --- | --- | --- | --- |
| 325 | 1.2.3.1.3.1.3 | **Gestion de Configuracion** | 0.03d | 2005-11-14 | 2005-11-14 |  | 17.11d |  |  | 0.3h | No inicia |
| 326 | 1.2.3.1.3.1.3.1 | Solicitar auditoria de GC | 0.1h | 2005-11-14 | 2005-11-14 |  | 17.12d |  | AS | 0.1h | No inicia |
| 327 | 1.2.3.1.3.1.3.2 | Auditoria de GC de Proyecto Especial | 0.2h | 2005-11-14 | 2005-11-14 |  | 17.11d |  | GC | 0.2h | No inicia |
| 328 | 1.2.3.1.3.1.4 | **Aseguramiento de calidad** | 5d? | 2005-11-14 | 2005-11-21 |  | 12.14d |  |  | 60h | No inicia |
| 329 | 1.2.3.1.3.1.4.1 | Preparar las actividades de QA. | 1d? | 2005-11-14 | 2005-11-15 |  | 12.14d | 0d | AC | 8h | No inicia |
| 330 | 1.2.3.1.3.1.4.2 | Ejecutar la Revisión de QA productos | 1d? | 2005-11-15 | 2005-11-16 | 329 | 12.14d | 0d | AC | 8h | No inicia |
| 331 | 1.2.3.1.3.1.4.3 | Ejecutar la Revisión de QA procesos | 0.25d | 2005-11-16 | 2005-11-16 | 330 | 14.89d |  | AC; AS | 4h | No inicia |
| 332 | 1.2.3.1.3.1.4.4 | Levantar la No Conformidad | 1d? | 2005-11-16 | 2005-11-17 | 330 | 12.14d | 0d | AS; AP | 16h | No inicia |
| 333 | 1.2.3.1.3.1.4.5 | Realizar el seguimiento | 1d? | 2005-11-17 | 2005-11-18 | 332 | 12.14d | 0d | AC; AS | 16h | No inicia |
| 334 | 1.2.3.1.3.1.4.6 | Elaborar e Informar las actividades de QA a la Gerencia del Servicio | 1d? | 2005-11-18 | 2005-11-21 | 333 | 12.14d |  | AC | 8h | No inicia |
| 335 | 1.2.3.1.3.1.5 | **Validación** | 5.5d | 2005-11-14 | 2005-11-22 |  | 11.64d |  |  | 52h | No inicia |
| 336 | 1.2.3.1.3.1.5.1 | Revisión por parte de ONP | 3d | 2005-11-14 | 2005-11-17 |  | 11.64d | 0d | Cliente | 24h | No inicia |
| 337 | 1.2.3.1.3.1.5.2 | Levantamiento de observaciones | 1d | 2005-11-17 | 2005-11-18 | 336 | 11.64d | 0d | AS | 8h | No inicia |
| 338 | 1.2.3.1.3.1.5.3 | Revisión de Calidad de las observaciones | 0.5d | 2005-11-18 | 2005-11-21 | 337 | 11.64d | 0d | AC | 4h | No inicia |
| 339 | 1.2.3.1.3.1.5.4 | Revisión final de ONP | 1d | 2005-11-21 | 2005-11-22 | 338 | 11.64d |  | Cliente; AS | 16h | No inicia |
| 340 | 1.2.3.1.3.1.5.5 | Actividad de Gestión de la Configuración: Etiquetar documentos: aprobado ONP y generar Baseline | 0.3h | 2005-11-14 | 2005-11-14 |  | 17.1d |  |  |  | No inicia |
| 341 | 1.2.3.1.3.2 | **Verificación - Pruebas Internas** | 5d? | 2005-11-14 | 2005-11-21 |  | 0d |  |  | 168h | No inicia |
| 342 | 1.2.3.1.3.2.1 | **Actividades previas** | 5d? | 2005-11-14 | 2005-11-21 |  | 0d |  |  | 48h | No inicia |
| 343 | 1.2.3.1.3.2.1.1 | Integración del producto | 1d? | 2005-11-14 | 2005-11-15 |  | 1d | 0d | AP | 8h | No inicia |
| 344 | 1.2.3.1.3.2.1.2 | Preparación de ambiente | 1d? | 2005-11-14 | 2005-11-15 |  | 0d |  | AP | 8h | No inicia |
| 345 | 1.2.3.1.3.2.1.3 | Verificación de ambiente | 1d? | 2005-11-15 | 2005-11-16 | 344 | 0d |  | AP | 8h | No inicia |
| 346 | 1.2.3.1.3.2.1.4 | Preparación de data | 3d? | 2005-11-16 | 2005-11-21 | 345 | 0d |  | AS | 24h | No inicia |
| 347 | 1.2.3.1.3.2.2 | **Realizar pruebas funcionales** | 3d? | 2005-11-15 | 2005-11-18 | 343 | 1d |  | AS | 72h | No inicia |
| 348 | 1.2.3.1.3.2.2.1 | Casos de Prueba 1 | 1d | 2005-11-15 | 2005-11-16 |  | 1d | 0d | AP; AS | 16h | No inicia |
| 349 | 1.2.3.1.3.2.2.2 | Casos de Prueba 2 | 1d? | 2005-11-16 | 2005-11-17 | 348 | 1d | 0d | AP; AS | 16h | No inicia |
| 350 | 1.2.3.1.3.2.2.3 | … | 1d? | 2005-11-17 | 2005-11-18 | 349 | 1d |  | AP; AS | 16h | No inicia |

Notes:
- 338: Esta actividad esta referida solo a la revisión de las observaciones emitidas por ONP que ya han sido levantadas.
- 347: La evidencia de las pruebas se encuentra en la Lista de Incidencias

| ID | WBS | Task | Duration | Start | Finish | Predecessors | Total slack | Resources | Work | Text2 |
| --- | --- | --- | --- | --- | --- | --- | --- | --- | --- | --- |
| 351 | 1.2.3.1.3.2.3 | **Realizar pruebas del sistema - (Código)** | 1d? | 2005-11-14 | 2005-11-15 |  | 4d | AS | 24h | No inicia |
| 352 | 1.2.3.1.3.2.3.1 | Codigo fuente | 1d? | 2005-11-14 | 2005-11-15 |  | 4d | AP | 8h | No inicia |
| 353 | 1.2.3.1.3.2.3.2 | Scripts de Base de datos | 1d? | 2005-11-14 | 2005-11-15 |  | 4d | AP | 8h | No inicia |
| 354 | 1.2.3.1.3.2.4 | **Realizar pruebas de esfuerzo** | 1d? | 2005-11-16 | 2005-11-17 | 348 | 2d | AS | 16h | No inicia |
| 355 | 1.2.3.1.3.2.4.1 | Realizar pruebas de esfuerzo | 1d? | 2005-11-16 | 2005-11-17 |  | 2d | AC | 8h | No inicia |
| 356 | 1.2.3.1.3.2.5 | **Realizar pruebas de seguridad y conectividad** | 1d? | 2005-11-14 | 2005-11-15 |  | 4d |  | 8h | No inicia |
| 357 | 1.2.3.1.3.2.5.1 | Pruebas de seguridad y conectividad | 1d? | 2005-11-14 | 2005-11-15 |  | 4d | AS | 8h | No inicia |
| 358 | 1.2.3.1.3.3 | **Gestión de configuración** | 0.07d | 2005-12-07 | 2005-12-07 | 385, 361, 341 | 0d |  | 0.6h | No inicia |
| 359 | 1.2.3.1.3.3.1 | Etiquetar directorio de fuentes | 0.1h | 2005-12-07 | 2005-12-07 |  | 0d | AS | 0.1h | No inicia |
| 360 | 1.2.3.1.3.3.2 | Auditoria de configuracion | 0.5h | 2005-12-07 | 2005-12-07 | 359 | 0d | GC | 0.5h | No inicia |
| 361 | 1.2.3.1.3.4 | **Pruebas de Aseguramiento de calidad** | 7.06d? | 2005-11-21 | 2005-11-30 | 341 | 0d |  | 56.5h | No inicia |
| 362 | 1.2.3.1.3.4.1 | Preparación de ambiente | 1d? | 2005-11-21 | 2005-11-22 |  | 0d | DBA | 8h | No inicia |
| 363 | 1.2.3.1.3.4.2 | Verificación de ambiente | 1d? | 2005-11-22 | 2005-11-23 | 362 | 0d | AP | 8h | No inicia |
| 364 | 1.2.3.1.3.4.3 | Preparación de data | 1d? | 2005-11-23 | 2005-11-24 | 363 | 0d | AP | 8h | No inicia |
| 365 | 1.2.3.1.3.4.4 | Realizar pruebas del sistema - Código | 1d? | 2005-11-24 | 2005-11-25 | 364 | 0d | AC | 8h | No inicia |
| 366 | 1.2.3.1.3.4.5 | Realizar pruebas del sistema - Funcionales | 1d? | 2005-11-25 | 2005-11-28 | 365 | 0d | AC | 8h | No inicia |
| 367 | 1.2.3.1.3.4.6 | Realizar pruebas del sistema - Otras | 1d? | 2005-11-28 | 2005-11-29 | 366 | 0d | AC | 8h | No inicia |
| 368 | 1.2.3.1.3.4.7 | Ejecutar la Revisión de procesos | 0.5h | 2005-11-29 | 2005-11-29 | 367 | 0d | AC | 0.5h | No inicia |
| 369 | 1.2.3.1.3.4.8 | Aprobación de las Pruebas de Calidad | 1d? | 2005-11-29 | 2005-11-30 | 368 | 0d | AC | 8h | No inicia |
| 370 | 1.2.3.1.3.5 | **Pase a QA** | 5d? | 2005-11-30 | 2005-12-07 | 361 | 0d |  | 136.3h | No inicia |
| 371 | 1.2.3.1.3.5.1 | **Elaborar documentos** | 1d? | 2005-11-30 | 2005-12-01 |  | 4.08d |  | 16h | No inicia |
| 372 | 1.2.3.1.3.5.1.1 | Etiquetar documento de Pase a QA | 0.1h | 2005-11-30 | 2005-11-30 |  | 5.06d |  |  | No inicia |
| 373 | 1.2.3.1.3.5.1.2 | Elaborar documentos para solicitar Pase a QA | 1d? | 2005-11-30 | 2005-12-01 |  | 4.08d | AS | 8h | No inicia |
| 374 | 1.2.3.1.3.5.1.3 | Preparación de data de pruebas | 1d? | 2005-11-30 | 2005-12-01 |  | 4.08d | Cliente | 8h | No inicia |

Notes:
- 359: Esta actividad comprende etiquetar el directorio, copiar los componentes en el directorio compartido con ONP y avisar a las contrapartes

| ID | WBS | Task | Type | Duration | Start | Finish | Predecessors | Total slack | Free slack | Resources | Work | Text2 |
| --- | --- | --- | --- | --- | --- | --- | --- | --- | --- | --- | --- | --- |
| 375 | 1.2.3.1.3.5.2 | **Verificación** |  | 4d? | 2005-11-30 | 2005-12-06 |  | 1.07d |  |  | 40h | No inicia |
| 376 | 1.2.3.1.3.5.2.1 | **Revisión interna** |  | 1d? | 2005-11-30 | 2005-12-01 |  | 1.07d |  |  | 8h | No inicia |
| 377 | 1.2.3.1.3.5.2.1.1 | Revisión Interna |  | 1d? | 2005-11-30 | 2005-12-01 |  | 1.07d | 0d | AS | 8h | No inicia |
| 378 | 1.2.3.1.3.5.2.2 | **Revisión de pares** |  | 3d? | 2005-12-01 | 2005-12-06 | 377 | 1.07d |  |  | 32h | No inicia |
| 379 | 1.2.3.1.3.5.2.2.1 | Preparación de Revisión de Pares |  | 1d? | 2005-12-01 | 2005-12-02 |  | 1.07d | 0d | LERP | 8h | No inicia |
| 380 | 1.2.3.1.3.5.2.2.2 | Ejecución de la Revisión de Pares |  | 1d? | 2005-12-02 | 2005-12-05 | 379 | 1.07d | 0d | RP; AS | 16h | No inicia |
| 381 | 1.2.3.1.3.5.2.2.3 | Cierre de la revisión de pares |  | 1d? | 2005-12-05 | 2005-12-06 | 380 | 1.07d |  | LERP | 8h | No inicia |
| 382 | 1.2.3.1.3.5.3 | **Gestion de Configuracion** |  | 0.03d | 2005-11-30 | 2005-11-30 |  | 5.05d |  |  | 0.3h | No inicia |
| 383 | 1.2.3.1.3.5.3.1 | Solicitar auditoria de GC |  | 0.1h | 2005-11-30 | 2005-11-30 |  | 5.06d |  | AS | 0.1h | No inicia |
| 384 | 1.2.3.1.3.5.3.2 | Auditoria de GC de Proyecto Especial |  | 0.2h | 2005-11-30 | 2005-11-30 |  | 5.05d |  | GC | 0.2h | No inicia |
| 385 | 1.2.3.1.3.5.4 | **Aseguramiento de calidad** |  | 5d? | 2005-11-30 | 2005-12-07 |  | 0d |  |  | 72h | No inicia |
| 386 | 1.2.3.1.3.5.4.1 | Preparar las actividades de QA. |  | 1d? | 2005-11-30 | 2005-12-01 |  | 0d |  | AC | 8h | No inicia |
| 387 | 1.2.3.1.3.5.4.2 | Ejecutar la Revisión de QA Producto |  | 1d | 2005-12-01 | 2005-12-02 | 386 | 0d |  | AC | 8h | No inicia |
| 388 | 1.2.3.1.3.5.4.3 | Ejecutar la Revisión de QA procesos |  | 1d | 2005-12-02 | 2005-12-05 | 387 | 2d |  | AC; AS | 16h | No inicia |
| 389 | 1.2.3.1.3.5.4.4 | Levantar la No Conformidad |  | 1d? | 2005-12-02 | 2005-12-05 | 387 | 0d |  | AS; AP | 16h | No inicia |
| 390 | 1.2.3.1.3.5.4.5 | Realizar el seguimiento |  | 1d? | 2005-12-05 | 2005-12-06 | 389 | 0d |  | AC; AS | 16h | No inicia |
| 391 | 1.2.3.1.3.5.4.6 | Elaborar e Informar las actividades de QA a la Gerencia del Servicio |  | 1d? | 2005-12-06 | 2005-12-07 | 390 | 0d |  | AC | 8h | No inicia |
| 392 | 1.2.3.1.3.5.5 | Solicitud de pase a QA | milestone | 0d | 2005-11-30 | 2005-11-30 |  | 5.08d |  | AS |  | No inicia |
| 393 | 1.2.3.1.3.5.6 | Ejecución de pase a QA |  | 1d? | 2005-11-30 | 2005-12-01 |  | 4.08d |  | Cliente | 8h | No inicia |
| 394 | 1.2.3.1.3.6 | **Validación - Pruebas de Aceptación** |  | 4d? | 2005-11-14 | 2005-11-18 |  | 13.14d |  |  | 56h | No inicia |
| 395 | 1.2.3.1.3.6.1 | Verificación de ambiente |  | 1d? | 2005-11-14 | 2005-11-15 |  | 13.14d | 0d | AP | 8h | No inicia |
| 396 | 1.2.3.1.3.6.2 | **Realizar pruebas** |  | 3d? | 2005-11-15 | 2005-11-18 | 395 | 13.14d |  |  | 40h | No inicia |
| 397 | 1.2.3.1.3.6.2.1 | Pruebas funcionales |  | 1d? | 2005-11-15 | 2005-11-16 |  | 15.14d |  | Cliente | 8h | No inicia |
| 398 | 1.2.3.1.3.6.2.2 | Pruebas de sistemas |  | 1d? | 2005-11-15 | 2005-11-16 |  | 13.14d | 0d | Cliente | 8h | No inicia |
| 399 | 1.2.3.1.3.6.2.3 | Pruebas de esfuerzo |  | 1d? | 2005-11-16 | 2005-11-17 | 398 | 13.14d | 0d | Cliente | 8h | No inicia |
| 400 | 1.2.3.1.3.6.2.4 | Pruebas de Seguridad y Conectividad |  | 1d? | 2005-11-17 | 2005-11-18 | 399 | 13.14d |  | Cliente | 8h | No inicia |
| 401 | 1.2.3.1.3.6.2.5 | Pruebas de migración |  | 1d? | 2005-11-15 | 2005-11-16 |  | 15.14d |  | Cliente | 8h | No inicia |
| 402 | 1.2.3.1.3.6.3 | Aprobación de las Pruebas de Aceptación |  | 1d? | 2005-11-14 | 2005-11-15 |  | 16.14d |  | Cliente | 8h | No inicia |
| 403 | 1.2.3.1.3.6.4 | Actividad de Gestión de la Configuración: Etiquetar directorio de fuentes: aprobado ONP y generar Baseline |  | 0.3h | 2005-11-14 | 2005-11-14 |  | 17.1d |  |  |  | No inicia |

| ID | WBS | Task | Type | Duration | Start | Finish | Predecessors | Total slack | Free slack | Resources | Work | Text2 |
| --- | --- | --- | --- | --- | --- | --- | --- | --- | --- | --- | --- | --- |
| 404 | 1.2.3.1.4 | **Flujo de Trabajo de Distribución** |  | 3.04d? | 2005-11-14 | 2005-11-17 |  | 14.1d |  |  | 40.3h | No inicia |
| 405 | 1.2.3.1.4.1 | **Elaboración de manual de usuario** |  | 1.01d? | 2005-11-14 | 2005-11-15 |  | 14.1d |  | AS | 8.1h | No inicia |
| 406 | 1.2.3.1.4.1.1 | Etiquetar documento manual de usuario |  | 0.1h | 2005-11-14 | 2005-11-14 |  | 14.1d | 0d |  |  | No inicia |
| 407 | 1.2.3.1.4.1.2 | Elaboración de manual de usuario |  | 1d? | 2005-11-14 | 2005-11-15 | 406 | 14.1d | 0d |  |  | No inicia |
| 408 | 1.2.3.1.4.2 | **Elaboración de manual de sistema** |  | 1.01d? | 2005-11-15 | 2005-11-16 | 407 | 14.1d |  | AS | 8.1h | No inicia |
| 409 | 1.2.3.1.4.2.1 | Etiquetar documento manual de sistema |  | 0.1h | 2005-11-15 | 2005-11-15 |  | 14.1d | 0d |  |  | No inicia |
| 410 | 1.2.3.1.4.2.2 | Elaboración de manual de sistema |  | 1d? | 2005-11-15 | 2005-11-16 | 409 | 14.1d | 0d |  |  | No inicia |
| 411 | 1.2.3.1.4.3 | **Elaboración de manual de administración y operación** |  | 1.01d? | 2005-11-16 | 2005-11-17 | 410 | 14.1d |  | AS | 8.1h | No inicia |
| 412 | 1.2.3.1.4.3.1 | Etiquetar documento manual de administración y operación |  | 0.1h | 2005-11-16 | 2005-11-16 |  | 14.1d | 0d |  |  | No inicia |
| 413 | 1.2.3.1.4.3.2 | Elaboración de manual de administración y operación |  | 1d? | 2005-11-16 | 2005-11-17 | 412 | 14.1d |  |  |  | No inicia |
| 414 | 1.2.3.1.4.4 | **Pase a producción** |  | 1d? | 2005-11-14 | 2005-11-15 |  | 16.14d |  |  | 16h | No inicia |
| 415 | 1.2.3.1.4.4.1 | **Elaboracion de Solicitud de Pase a producción** |  | 1d? | 2005-11-14 | 2005-11-15 |  | 16.14d |  | AS | 8h | No inicia |
| 416 | 1.2.3.1.4.4.1.1 | Etiquetar documento Solicitud de Pase a producción |  | 0.1h | 2005-11-14 | 2005-11-14 |  | 17.12d |  |  |  | No inicia |
| 417 | 1.2.3.1.4.4.1.2 | Elaboración de Solicitud de Pase a producción |  | 1d? | 2005-11-14 | 2005-11-15 |  | 16.14d |  |  |  | No inicia |
| 418 | 1.2.3.1.4.4.2 | Soporte al pase a producción |  | 1d? | 2005-11-14 | 2005-11-15 |  | 16.14d | 0d | Cliente | 8h | No inicia |
| 419 | 1.2.3.1.4.4.3 | Pase a producción | milestone | 0d | 2005-11-15 | 2005-11-15 | 418 | 16.14d |  | Cliente |  | No inicia |
| 420 | 1.2.3.1.5 | **Flujo de Trabajo de Gestión** |  | 1.01d? | 2005-11-14 | 2005-11-15 |  | 16.12d |  |  | 24.1h | No inicia |
| 421 | 1.2.3.1.5.1 | Evaluación de la iteración |  | 1d? | 2005-11-14 | 2005-11-15 |  | 16.14d |  | AS | 8h | No inicia |
| 422 | 1.2.3.1.5.2 | **Actualización del plan de iteraciones** |  | 1.01d? | 2005-11-14 | 2005-11-15 |  | 16.12d |  | AS | 8.1h | No inicia |
| 423 | 1.2.3.1.5.2.1 | Etiquetar documento plan de iteraciones |  | 0.1h | 2005-11-14 | 2005-11-14 |  | 16.12d | 0d |  |  | No inicia |
| 424 | 1.2.3.1.5.2.2 | Modificacion de plan de iteraciones |  | 1d? | 2005-11-14 | 2005-11-15 | 423 | 16.12d |  |  |  | No inicia |
| 425 | 1.2.3.1.5.3 | Planificar el cronograma de la siguiente iteración |  | 1d? | 2005-11-14 | 2005-11-15 |  | 16.14d |  | AS | 8h | No inicia |
| 426 | 1.2.4 | **Transición** |  | 13.66d? | 2005-12-07 | 2005-12-27 | 286 | 0d |  |  | 122.3h | No inicia |
| 427 | 1.2.4.1 | **Flujo de Trabajo de Distribución** |  | 13.66d? | 2005-12-07 | 2005-12-27 |  | 0d |  |  | 122.3h | No inicia |
| 428 | 1.2.4.1.1 | **Actualización de Manual de usuario** |  | 1.01d? | 2005-12-07 | 2005-12-08 |  | 0d |  | AP | 8.1h | No inicia |
| 429 | 1.2.4.1.1.1 | Etiquetar documento manual de usuario |  | 0.1h | 2005-12-07 | 2005-12-07 |  | 0d |  |  |  | No inicia |
| 430 | 1.2.4.1.1.2 | Modificacion de manual de usuario |  | 1d? | 2005-12-07 | 2005-12-08 | 429 | 0d |  |  |  | No inicia |

| ID | WBS | Task | Duration | Start | Finish | Predecessors | Total slack | Free slack | Resources | Work | Text2 |
| --- | --- | --- | --- | --- | --- | --- | --- | --- | --- | --- | --- |
| 431 | 1.2.4.1.2 | **Actualización de Manual de sistema** | 1.01d? | 2005-12-08 | 2005-12-09 | 430 | 0d |  | AP | 8.1h | No inicia |
| 432 | 1.2.4.1.2.1 | Etiquetar documento manual de sistema | 0.1h | 2005-12-08 | 2005-12-08 |  | 0d |  |  |  | No inicia |
| 433 | 1.2.4.1.2.2 | Modificacion de manual de sistema | 1d? | 2005-12-08 | 2005-12-09 | 432 | 0d |  |  |  | No inicia |
| 434 | 1.2.4.1.3 | **Actualización de Manual de Administración e instalación** | 1.01d? | 2005-12-09 | 2005-12-12 | 433 | 0d |  | AP | 8.1h | No inicia |
| 435 | 1.2.4.1.3.1 | Etiquetar documento manual de administración y operación | 0.1h | 2005-12-09 | 2005-12-09 |  | 0d |  |  |  | No inicia |
| 436 | 1.2.4.1.3.2 | Modificacion de manual de administración y operación | 1d? | 2005-12-09 | 2005-12-12 | 435 | 0d |  |  |  | No inicia |
| 437 | 1.2.4.1.4 | **Gestión de configuración** | 0.12d | 2005-12-07 | 2005-12-07 |  | 13.54d |  |  | 1h | No inicia |
| 438 | 1.2.4.1.4.1 | Solicitar auditoria de GC | 0.1h | 2005-12-07 | 2005-12-07 |  | 13.54d | 0d | AS | 0.1h | No inicia |
| 439 | 1.2.4.1.4.2 | Auditoria de GC de Proyecto Especial | 0.9h | 2005-12-07 | 2005-12-07 | 438 | 13.54d |  | GC | 0.9h | No inicia |
| 440 | 1.2.4.1.5 | **Revisión de Calidad de la documentación** | 5d? | 2005-12-12 | 2005-12-19 | 436 | 0d |  |  | 44h | No inicia |
| 441 | 1.2.4.1.5.1 | **Aseguramiento de calidad** | 5d? | 2005-12-12 | 2005-12-19 |  | 0d |  |  | 44h | No inicia |
| 442 | 1.2.4.1.5.1.1 | Preparar las actividades de QA. | 1d? | 2005-12-12 | 2005-12-13 |  | 0d |  | AC | 8h | No inicia |
| 443 | 1.2.4.1.5.1.2 | Ejecutar la Revisión de QA | 1d? | 2005-12-13 | 2005-12-14 | 442 | 0d |  | AC | 8h | No inicia |
| 444 | 1.2.4.1.5.1.3 | Ejecutar la Revisión de procesos | 0.5d | 2005-12-14 | 2005-12-15 | 443 | 2.5d |  | AC | 4h | No inicia |
| 445 | 1.2.4.1.5.1.4 | Levantar la No Conformidad | 1d? | 2005-12-14 | 2005-12-15 | 443 | 0d |  | AS | 8h | No inicia |
| 446 | 1.2.4.1.5.1.5 | Realizar el seguimiento | 1d? | 2005-12-15 | 2005-12-16 | 445 | 0d |  | AC | 8h | No inicia |
| 447 | 1.2.4.1.5.1.6 | Elaborar e Informar las actividades de QA a la Gerencia del Servicio | 1d? | 2005-12-16 | 2005-12-19 | 446 | 0d |  | AC | 8h | No inicia |
| 448 | 1.2.4.1.6 | Etiquetar directorio | 0.5h | 2005-12-19 | 2005-12-19 | 441 | 0d |  | AS | 0.5h | No inicia |
| 449 | 1.2.4.1.7 | Auditoria de configuracion | 0.5h | 2005-12-19 | 2005-12-19 | 448 | 0d |  | GC | 0.5h | No inicia |
| 450 | 1.2.4.1.8 | **Revisión y aprobación por parte de ONP** | 5.5d | 2005-12-19 | 2005-12-27 | 449 | 0d |  |  | 52h | No inicia |
| 451 | 1.2.4.1.8.1 | Revisión por parte de ONP | 3d | 2005-12-19 | 2005-12-22 |  | 0d |  | Cliente | 24h | No inicia |
| 452 | 1.2.4.1.8.2 | Levantamiento de observaciones | 1d | 2005-12-22 | 2005-12-23 | 451 | 0d |  | AS | 8h | No inicia |
| 453 | 1.2.4.1.8.3 | Revisión de Calidad de las observaciones | 0.5d | 2005-12-23 | 2005-12-26 | 452 | 0d |  | AC | 4h | No inicia |
| 454 | 1.2.4.1.8.4 | Revisión final de ONP | 1d | 2005-12-26 | 2005-12-27 | 453 | 0d |  | AS; Cliente | 16h | No inicia |
| 455 | 1.2.4.1.8.5 | Actividad de Gestión de la Configuración: Etiquetar manuales: aprobado ONP y generar Baseline | 1h | 2005-12-19 | 2005-12-19 |  | 5.38d |  |  |  | No inicia |
| 456 | 1.3 | Soporte post-producción | 20d | 2005-09-15 | 2005-10-12 |  | 54.84d |  |  |  | No inicia |

Notes:
- 438: Esta actividad comprende etiquetar el directorio, copiar los componentes en el directorio compartido con ONP y avisar a las contrapartes
- 453: Esta actividad esta referida solo a la revisión de las observaciones emitidas por ONP que ya han sido levantadas.

| ID | WBS | Task | Duration | Start | Finish | Total slack | Text2 |
| --- | --- | --- | --- | --- | --- | --- | --- |
| 457 | 1.4 | **Otras actividades** | 1d? | 2005-09-15 | 2005-09-15 | 73.84d | No inicia |
| 458 | 1.4.1 | **Revisión de Pares de otros proyectos** | 1d? | 2005-09-15 | 2005-09-15 | 73.84d | No inicia |
| 459 | 1.4.1.1 | **Sistema / Proyecto Especial** | 1d? | 2005-09-15 | 2005-09-15 | 73.84d | No inicia |
| 460 | 1.4.1.1.1 | **PR / Nombre de Sistema** | 1d? | 2005-09-15 | 2005-09-15 | 73.84d | No inicia |
| 461 | 1.4.1.1.1.1 | Ejecución de la Revisión de Pares: Nombre de documento de Revisión | 1d? | 2005-09-15 | 2005-09-15 | 73.84d | No inicia |
| 462 | 1.4.1.1.1.2 | Ejecución de la Revisión de Pares: Nombre de documento de Revisión | 1d? | 2005-09-15 | 2005-09-15 | 73.84d | No inicia |
| 463 | 1.4.1.1.1.3 | Ejecución de la Revisión de Pares: Nombre de documento de Revisión | 1d? | 2005-09-15 | 2005-09-15 | 73.84d | No inicia |
| 464 | 1.4.1.1.2 | **PR / Nombre de Sistema** | 1d? | 2005-09-15 | 2005-09-15 | 73.84d | No inicia |
| 465 | 1.4.1.1.2.1 | Ejecución de la Revisión de Pares: Nombre de documento de Revisión | 1d? | 2005-09-15 | 2005-09-15 | 73.84d | No inicia |
| 466 | 1.4.1.1.2.2 | Ejecución de la Revisión de Pares: Nombre de documento de Revisión | 1d? | 2005-09-15 | 2005-09-15 | 73.84d | No inicia |
| 467 | 1.4.1.1.2.3 | Ejecución de la Revisión de Pares: Nombre de documento de Revisión | 1d? | 2005-09-15 | 2005-09-15 | 73.84d | No inicia |
